# Создание карты города

How a schedule from MS Project changed from version to version. A marks actual dates.

## Version 1 (saved 2025-03-06)

Note of the change: add lab_02, lab_03

| ID | WBS | Task | Duration | Start | Finish | Predecessors | Total float | Constraint |
| --- | --- | --- | --- | --- | --- | --- | --- | --- |
| 1 |  | Начало проекта | 0w | 2025-03-03 09:00 | 2025-03-03 09:00 |  | 56.99d |  |
| 2 | 2 | **Создание интерфейса** | 90.8d | 2025-03-03 09:00 | 2025-07-16 10:23 | 1 | 0d |  |
| 3 | 2.1 | **Разработка дизайна интерфейса** | 25.62d | 2025-03-03 09:00 | 2025-04-07 16:00 |  | 56.99d |  |
| 4 |  | Разработка 2D графических элементов | 3w | 2025-03-03 09:00 | 2025-03-24 13:00 |  | 56.99d |  |
| 5 |  | Разработка 3D графических элементов | 2w | 2025-03-03 09:00 | 2025-03-17 12:00 | 4SS | 56.99d |  |
| 6 |  | Создание заставки | 3w | 2025-03-17 12:00 | 2025-04-07 16:00 | 5 | 56.99d |  |
| 7 |  | Программирование интерфейса | 1.5w | 2025-07-04 15:23 | 2025-07-16 10:23 | 3, 12 | 0d |  |
| 8 | 3 | **Построение базы объектов** | 92.38d | 2025-03-24 15:00 | 2025-08-08 11:00 |  | 5.49d |  |
| 9 |  | Анализ и построение структуры базы объектов | 2w | 2025-03-24 15:00 | 2025-04-07 16:00 |  | 5.49d |  |
| 10 |  | Программирование средств обработки базы объектов | 2.35w | 2025-04-07 16:00 | 2025-05-14 10:00 | 9 | 5.49d |  |
| 11 |  | Наполнение базы объектов | 12w | 2025-05-14 10:00 | 2025-08-08 11:00 | 10 | 5.49d |  |
| 12 | 4 | **Создание ядра GIS** | 83.3d | 2025-03-03 09:00 | 2025-07-04 15:23 |  | 0d |  |
| 13 |  | Анализ и проектирование ядра | 3.08w | 2025-03-03 09:00 | 2025-03-24 13:00 |  | 0d |  |
| 14 |  | Создание модели ядра | 5.97w | 2025-03-24 14:00 | 2025-05-07 15:00 | 13 | 0d |  |
| 15 |  | Тестирование модели ядра | 1w | 2025-05-14 10:00 | 2025-05-21 10:00 | 14 | 0d |  |
| 16 |  | Создание рабочей версии ядра | 6.08w | 2025-05-21 10:00 | 2025-07-04 15:23 | 15 | 0d |  |
| 17 |  | Создание мультимедиа-наполнения | 6w | 2025-04-07 16:00 | 2025-05-26 15:00 | 3 | 56.99d |  |
| 18 |  | Создание справочной системы | 2w | 2025-07-25 14:23 | 2025-08-08 15:23 | 7 | 5.07d |  |
| 19 | 7 | **Создание руководства пользователя** | 17.25d | 2025-07-02 10:23 | 2025-07-25 12:23 | 7FS-10d | 0d |  |
| 20 |  | Разработка дизайна руководства | 1w | 2025-07-02 10:23 | 2025-07-09 10:23 |  | 0d |  |
| 21 |  | Написание руководства пользователя | 3w | 2025-07-04 10:23 | 2025-07-25 12:23 | 20SS+2d | 0d |  |
| 22 | 8 | **Создание web-сайта и поддержка** | 23.38d | 2025-07-04 10:23 | 2025-08-06 14:23 |  | 0d |  |
| 23 |  | Разработка структуры сайта | 1d | 2025-07-04 10:23 | 2025-07-07 10:23 | 21SS | 0d |  |
| 24 |  | Разработка дизайна сайта | 1.43w | 2025-07-07 10:23 | 2025-07-16 11:23 | 23 | 0d |  |
| 25 |  | Наполнение сайта | 3w | 2025-07-16 11:23 | 2025-08-06 14:23 | 24 | 0d |  |
| 26 |  | Тестирование сайта | 2.44w | 2025-07-30 14:23 | 2025-08-15 15:56 | 22FS-1w | 0d |  |
| 27 |  | Сдача сайта в эксплуатацию | 0w | 2025-08-15 15:56 | 2025-08-15 15:56 | 26 | 0d |  |
| 28 | 11 | **Совещание** | 108.75d | 2025-03-05 10:00 | 2025-08-13 11:00 |  | 2.49d |  |
| 29 |  | Совещание 1 | 1h | 2025-03-05 10:00 | 2025-03-05 11:00 |  | 111.12d | start no earlier than 2025-03-05 10:00 |
| 30 |  | Совещание 2 | 1h | 2025-03-12 10:00 | 2025-03-12 11:00 |  | 106.24d | start no earlier than 2025-03-12 10:00 |
| 31 |  | Совещание 3 | 1h | 2025-03-19 10:00 | 2025-03-19 11:00 |  | 101.24d | start no earlier than 2025-03-19 10:00 |
| 32 |  | Совещание 4 | 1h | 2025-03-26 10:00 | 2025-03-26 11:00 |  | 96.24d | start no earlier than 2025-03-26 10:00 |
| 33 |  | Совещание 5 | 1h | 2025-04-02 10:00 | 2025-04-02 11:00 |  | 91.24d | start no earlier than 2025-04-02 10:00 |
| 34 |  | Совещание 6 | 1h | 2025-04-09 10:00 | 2025-04-09 11:00 |  | 86.24d | start no earlier than 2025-04-09 10:00 |
| 35 |  | Совещание 7 | 1h | 2025-04-16 10:00 | 2025-04-16 11:00 |  | 81.24d | start no earlier than 2025-04-16 10:00 |
| 36 |  | Совещание 8 | 1h | 2025-04-23 10:00 | 2025-04-23 11:00 |  | 76.24d | start no earlier than 2025-04-23 10:00 |
| 37 |  | Совещание 9 | 1h | 2025-04-30 10:00 | 2025-04-30 11:00 |  | 71.24d | start no earlier than 2025-04-30 10:00 |
| 38 |  | Совещание 10 | 1h | 2025-05-07 10:00 | 2025-05-07 11:00 |  | 68.37d | start no earlier than 2025-05-07 10:00 |
| 39 |  | Совещание 11 | 1h | 2025-05-14 10:00 | 2025-05-14 11:00 |  | 65.37d | start no earlier than 2025-05-14 10:00 |
| 40 |  | Совещание 12 | 1h | 2025-05-21 10:00 | 2025-05-21 11:00 |  | 60.37d | start no earlier than 2025-05-21 10:00 |
| 41 |  | Совещание 13 | 1h | 2025-05-28 10:00 | 2025-05-28 11:00 |  | 55.37d | start no earlier than 2025-05-28 10:00 |
| 42 |  | Совещание 14 | 1h | 2025-06-04 10:00 | 2025-06-04 11:00 |  | 50.37d | start no earlier than 2025-06-04 10:00 |
| 43 |  | Совещание 15 | 1h | 2025-06-11 10:00 | 2025-06-11 11:00 |  | 45.37d | start no earlier than 2025-06-11 10:00 |
| 44 |  | Совещание 16 | 1h | 2025-06-18 10:00 | 2025-06-18 11:00 |  | 42.49d | start no earlier than 2025-06-18 10:00 |
| 45 |  | Совещание 17 | 1h | 2025-06-25 10:00 | 2025-06-25 11:00 |  | 37.49d | start no earlier than 2025-06-25 10:00 |
| 46 |  | Совещание 18 | 1h | 2025-07-02 10:00 | 2025-07-02 11:00 |  | 32.49d | start no earlier than 2025-07-02 10:00 |
| 47 |  | Совещание 19 | 1h | 2025-07-09 10:00 | 2025-07-09 11:00 |  | 27.49d | start no earlier than 2025-07-09 10:00 |
| 48 |  | Совещание 20 | 1h | 2025-07-16 10:00 | 2025-07-16 11:00 |  | 22.49d | start no earlier than 2025-07-16 10:00 |
| 49 |  | Совещание 21 | 1h | 2025-07-23 10:00 | 2025-07-23 11:00 |  | 17.49d | start no earlier than 2025-07-23 10:00 |
| 50 |  | Совещание 22 | 1h | 2025-07-30 10:00 | 2025-07-30 11:00 |  | 12.49d | start no earlier than 2025-07-30 10:00 |
| 51 |  | Совещание 23 | 1h | 2025-08-06 10:00 | 2025-08-06 11:00 |  | 7.49d | start no earlier than 2025-08-06 10:00 |
| 52 |  | Совещание 24 | 1h | 2025-08-13 10:00 | 2025-08-13 11:00 |  | 2.49d | start no earlier than 2025-08-13 10:00 |

## Version 2 (saved 2025-03-17)

Note of the change: Add 03, 04, tasks 05

Last finish 2025-08-15 → 2025-08-18 (+3d).

Changed:

| ID | Task | Start | Finish | Duration | Total float | Other |
| --- | --- | --- | --- | --- | --- | --- |
| 2 | **Создание интерфейса** |  | 2025-07-16 10:23 → 2025-07-16 11:48 | 90.8d → 90.98d |  | baseline finish 2025-07-16 10:23 → 2025-07-16 11:48 |
| 7 | Программирование интерфейса | 2025-07-04 15:23 → 2025-07-04 16:48 | 2025-07-16 10:23 → 2025-07-16 11:48 |  |  | baseline start 2025-07-04 15:23 → 2025-07-04 16:48; baseline finish 2025-07-16 10:23 → 2025-07-16 11:48 |
| 8 | **Построение базы объектов** | 2025-03-24 15:00 → 2025-03-24 14:00 |  | 92.38d → 92.5d | 5.49d → 5.92d | baseline start 2025-03-24 15:00 → 2025-03-24 14:00 |
| 9 | Анализ и построение структуры базы объектов | 2025-03-24 15:00 → 2025-03-24 14:00 |  |  | 5.49d → 5.92d | baseline start 2025-03-24 15:00 → 2025-03-24 14:00 |
| 10 | Программирование средств обработки базы объектов |  |  | 2.35w → 3w | 5.49d → 5.92d |  |
| 12 | **Создание ядра GIS** |  | 2025-07-04 15:23 → 2025-07-04 16:48 | 83.3d → 83.48d |  | baseline finish 2025-07-04 15:23 → 2025-07-04 16:48 |
| 13 | Анализ и проектирование ядра |  |  | 3.08w → 3w |  |  |
| 14 | Создание модели ядра |  | 2025-05-07 15:00 → 2025-04-29 10:00 (-8d) | 5.97w → 5.12w |  | baseline finish 2025-05-07 15:00 → 2025-04-29 10:00 |
| 16 | Создание рабочей версии ядра |  | 2025-07-04 15:23 → 2025-07-04 16:48 | 6.08w → 6.12w |  | baseline finish 2025-07-04 15:23 → 2025-07-04 16:48 |
| 17 | Создание мультимедиа-наполнения |  | 2025-05-26 15:00 → 2025-05-26 16:00 |  | 56.99d → 57.3d | baseline finish 2025-05-26 15:00 → 2025-05-26 16:00 |
| 18 | Создание справочной системы | 2025-07-25 14:23 → 2025-07-25 15:48 | 2025-08-08 15:23 → 2025-08-08 17:48 |  | 5.07d → 5.19d | baseline start 2025-07-25 14:23 → 2025-07-25 15:48; baseline finish 2025-08-08 15:23 → 2025-08-08 17:48 |
| 19 | **Создание руководства пользователя** | 2025-07-02 10:23 → 2025-07-02 11:48 | 2025-07-25 12:23 → 2025-07-25 15:48 | 17.25d → 17.38d |  | baseline start 2025-07-02 10:23 → 2025-07-02 11:48; baseline finish 2025-07-25 12:23 → 2025-07-25 15:48 |
| 20 | Разработка дизайна руководства | 2025-07-02 10:23 → 2025-07-02 11:48 | 2025-07-09 10:23 → 2025-07-09 12:48 |  |  | baseline start 2025-07-02 10:23 → 2025-07-02 11:48; baseline finish 2025-07-09 10:23 → 2025-07-09 12:48 |
| 21 | Написание руководства пользователя | 2025-07-04 10:23 → 2025-07-04 11:48 | 2025-07-25 12:23 → 2025-07-25 15:48 |  |  | baseline start 2025-07-04 10:23 → 2025-07-04 11:48; baseline finish 2025-07-25 12:23 → 2025-07-25 15:48 |
| 22 | **Создание web-сайта и поддержка** | 2025-07-04 10:23 → 2025-07-04 11:48 | 2025-08-06 14:23 → 2025-08-06 17:48 | 23.38d → 23.62d |  | baseline start 2025-07-04 10:23 → 2025-07-04 11:48; baseline finish 2025-08-06 14:23 → 2025-08-06 17:48 |
| 23 | Разработка структуры сайта | 2025-07-04 10:23 → 2025-07-04 11:48 | 2025-07-07 10:23 → 2025-07-07 11:48 |  |  | baseline start 2025-07-04 10:23 → 2025-07-04 11:48; baseline finish 2025-07-07 10:23 → 2025-07-07 11:48 |
| 24 | Разработка дизайна сайта | 2025-07-07 10:23 → 2025-07-07 11:48 | 2025-07-16 11:23 → 2025-07-16 14:48 | 1.43w → 1.4w |  | baseline start 2025-07-07 10:23 → 2025-07-07 11:48; baseline finish 2025-07-16 11:23 → 2025-07-16 14:48 |
| 25 | Наполнение сайта | 2025-07-16 11:23 → 2025-07-16 14:48 | 2025-08-06 14:23 → 2025-08-06 17:48 |  |  | baseline start 2025-07-16 11:23 → 2025-07-16 14:48; baseline finish 2025-08-06 14:23 → 2025-08-06 17:48 |
| 26 | Тестирование сайта | 2025-07-30 14:23 → 2025-07-30 17:48 | 2025-08-15 15:56 → 2025-08-18 10:22 (+3d) |  |  | baseline start 2025-07-30 14:23 → 2025-07-30 17:48; baseline finish 2025-08-15 15:56 → 2025-08-18 10:22 |
| 27 | Сдача сайта в эксплуатацию | 2025-08-15 15:56 → 2025-08-18 10:22 (+3d) | 2025-08-15 15:56 → 2025-08-18 10:22 (+3d) |  |  | baseline start 2025-08-15 15:56 → 2025-08-18 10:22; baseline finish 2025-08-15 15:56 → 2025-08-18 10:22 |
