# Создать карту города на основе собственного модуля отображения

How a schedule from MS Project changed from version to version. A marks actual dates.

## Version 1 (data date 2025-05-12, saved 2025-03-11, file lab3_3.mpp)

Note of the change: Add 03, 04, tasks 05

| ID | WBS | Task | Duration | Start | Finish | Predecessors | Complete | Total float | Constraint |
| --- | --- | --- | --- | --- | --- | --- | --- | --- | --- |
| 1 |  | Начало проекта | 0d | 2025-03-03 09:00 A | 2025-03-03 09:00 A |  | 100% |  |  |
| 2 | 2 | **Создание интерфейса** | 92.69d | 2025-03-03 09:00 A | 2025-07-18 08:33 | 1 | 88% | 0d |  |
| 3 | 2.1 | **Разработка дизайна интерфейса** | 30.62d | 2025-03-03 09:00 A | 2025-04-14 16:00 A |  | 100% |  |  |
| 4 |  | Разработка 2D графических элементов | 3w | 2025-03-03 09:00 A | 2025-03-31 14:00 A |  | 100% |  |  |
| 5 |  | Разработка 3D графических элементов | 2w | 2025-03-03 09:00 A | 2025-03-17 12:00 A | 4SS | 100% |  |  |
| 6 |  | Создание заставки | 4w | 2025-03-17 13:00 A | 2025-04-14 16:00 A | 5 | 100% |  |  |
| 7 |  | Программирование интерфейса | 1.2w | 2025-07-10 08:33 | 2025-07-18 08:33 | 3, 12 |  | 0d |  |
| 8 | 3 | **Построение базы объектов** | 68.82d | 2025-03-24 15:00 A | 2025-07-07 14:34 |  | 42% | 33.97d |  |
| 9 |  | Анализ и построение структуры базы объектов | 2w | 2025-03-24 15:00 A | 2025-04-07 16:00 A |  | 100% |  |  |
| 10 |  | Программирование средств обработки базы объектов | 3.13w | 2025-04-07 16:00 A | 2025-05-13 09:01 | 9 | 65% | 0d |  |
| 11 |  | Наполнение базы объектов | 9.61w | 2025-04-22 11:01 A | 2025-07-07 14:34 | 10 | 22% | 33.97d |  |
| 12 | 4 | **Создание ядра GIS** | 86.69d | 2025-03-03 09:00 A | 2025-07-10 08:33 |  | 41% | 0d |  |
| 13 |  | Анализ и проектирование ядра | 3.08w | 2025-03-03 09:00 A | 2025-03-24 14:00 A |  | 100% |  |  |
| 14 |  | Создание модели ядра | 2.02w | 2025-03-24 14:00 A | 2025-04-07 14:49 A | 13 | 100% |  |  |
| 15 |  | Тестирование модели ядра | 0.5w | 2025-04-07 14:49 A | 2025-04-10 09:49 A | 14 | 100% |  |  |
| 16 |  | Создание рабочей версии ядра | 10.46w | 2025-04-14 13:51 A | 2025-07-10 08:33 | 15 | 9% | 0d |  |
| 17 |  | Создание мультимедиа – наполнения | 6w | 2025-04-07 16:00 A | 2025-05-26 14:00 | 3 | 69% | 61.92d |  |
| 18 |  | Создание справочной системы | 2w | 2025-07-29 11:33 | 2025-08-12 13:33 | 7 |  | 8.1d |  |
| 19 | 7 | **Создание руководства пользователя** | 17.25d | 2025-07-04 08:33 | 2025-07-29 10:33 | 7FS-10d |  | 0d |  |
| 20 |  | Разработка дизайна руководства | 1w | 2025-07-04 08:33 | 2025-07-11 08:33 |  |  | 0d |  |
| 21 |  | Написание руководства пользователя | 3w | 2025-07-08 08:33 | 2025-07-29 10:33 | 20SS+2d |  | 0d |  |
| 22 | 8 | **Создание web – сайта и поддержка** | 23.38d | 2025-07-08 08:33 | 2025-08-08 11:33 |  |  | 0d |  |
| 23 |  | Разработка структуры сайта | 1d | 2025-07-08 08:33 | 2025-07-09 08:33 | 21SS |  | 0d |  |
| 24 |  | Разработка дизайна сайта | 1.43w | 2025-07-09 08:33 | 2025-07-18 09:33 | 23 |  | 0d |  |
| 25 |  | Наполнение сайта | 3w | 2025-07-18 09:33 | 2025-08-08 11:33 | 24 |  | 0d |  |
| 26 |  | Тестирование сайта | 3.05w | 2025-08-01 11:33 | 2025-08-22 14:22 | 22FS-1w |  | 0d |  |
| 27 |  | Сдача сайта в эксплуатацию | 0d | 2025-08-22 14:22 | 2025-08-22 14:22 | 26 |  | 0d |  |
| 28 | 11 | **Еженедельное собрание** | 113.88d | 2025-03-05 09:00 A | 2025-08-20 10:00 |  | 40% | 2.42d |  |
| 29 |  | Еженедельное собрание 1 | 1h | 2025-03-05 09:00 A | 2025-03-05 10:00 A |  | 100% |  | start no earlier than 2025-03-05 09:00 |
| 30 |  | Еженедельное собрание 2 | 1h | 2025-03-12 09:00 A | 2025-03-12 10:00 A |  | 100% |  | start no earlier than 2025-03-12 09:00 |
| 31 |  | Еженедельное собрание 3 | 1h | 2025-03-19 09:00 A | 2025-03-19 10:00 A |  | 100% |  | start no earlier than 2025-03-19 09:00 |
| 32 |  | Еженедельное собрание 4 | 1h | 2025-03-26 09:00 A | 2025-03-26 10:00 A |  | 100% |  | start no earlier than 2025-03-26 09:00 |
| 33 |  | Еженедельное собрание 5 | 1h | 2025-04-02 09:00 A | 2025-04-02 10:00 A |  | 100% |  | start no earlier than 2025-04-02 09:00 |
| 34 |  | Еженедельное собрание 6 | 1h | 2025-04-09 09:00 A | 2025-04-09 10:00 A |  | 100% |  | start no earlier than 2025-04-09 09:00 |
| 35 |  | Еженедельное собрание 7 | 1h | 2025-04-16 09:00 A | 2025-04-16 10:00 A |  | 100% |  | start no earlier than 2025-04-16 09:00 |
| 36 |  | Еженедельное собрание 8 | 1h | 2025-04-23 09:00 A | 2025-04-23 10:00 A |  | 100% |  | start no earlier than 2025-04-23 09:00 |
| 37 |  | Еженедельное собрание 9 | 1h | 2025-04-30 09:00 A | 2025-04-30 10:00 A |  | 100% |  | start no earlier than 2025-04-30 09:00 |
| 38 |  | Еженедельное собрание 10 | 1h | 2025-05-07 09:00 A | 2025-05-07 10:00 A |  | 100% |  | start no earlier than 2025-05-07 09:00 |
| 39 |  | Еженедельное собрание 11 | 1h | 2025-05-14 09:00 | 2025-05-14 10:00 |  |  | 70.3d | start no earlier than 2025-05-14 09:00 |
| 40 |  | Еженедельное собрание 12 | 1h | 2025-05-21 09:00 | 2025-05-21 10:00 |  |  | 65.3d | start no earlier than 2025-05-21 09:00 |
| 41 |  | Еженедельное собрание 13 | 1h | 2025-05-28 09:00 | 2025-05-28 10:00 |  |  | 60.3d | start no earlier than 2025-05-28 09:00 |
| 42 |  | Еженедельное собрание 14 | 1h | 2025-06-04 09:00 | 2025-06-04 10:00 |  |  | 55.3d | start no earlier than 2025-06-04 09:00 |
| 43 |  | Еженедельное собрание 15 | 1h | 2025-06-11 09:00 | 2025-06-11 10:00 |  |  | 50.42d | start no earlier than 2025-06-11 09:00 |
| 44 |  | Еженедельное собрание 16 | 1h | 2025-06-18 09:00 | 2025-06-18 10:00 |  |  | 47.42d | start no earlier than 2025-06-18 09:00 |
| 45 |  | Еженедельное собрание 17 | 1h | 2025-06-25 09:00 | 2025-06-25 10:00 |  |  | 42.42d | start no earlier than 2025-06-25 09:00 |
| 46 |  | Еженедельное собрание 18 | 1h | 2025-07-02 09:00 | 2025-07-02 10:00 |  |  | 37.42d | start no earlier than 2025-07-02 09:00 |
| 47 |  | Еженедельное собрание 19 | 1h | 2025-07-09 09:00 | 2025-07-09 10:00 |  |  | 32.42d | start no earlier than 2025-07-09 09:00 |
| 48 |  | Еженедельное собрание 20 | 1h | 2025-07-16 09:00 | 2025-07-16 10:00 |  |  | 27.42d | start no earlier than 2025-07-16 09:00 |
| 49 |  | Еженедельное собрание 21 | 1h | 2025-07-23 09:00 | 2025-07-23 10:00 |  |  | 22.42d | start no earlier than 2025-07-23 09:00 |
| 50 |  | Еженедельное собрание 22 | 1h | 2025-07-30 09:00 | 2025-07-30 10:00 |  |  | 17.42d | start no earlier than 2025-07-30 09:00 |
| 51 |  | Еженедельное собрание 23 | 1h | 2025-08-06 09:00 | 2025-08-06 10:00 |  |  | 12.42d | start no earlier than 2025-08-06 09:00 |
| 52 |  | Еженедельное собрание 24 | 1h | 2025-08-13 09:00 | 2025-08-13 10:00 |  |  | 7.42d | start no earlier than 2025-08-13 09:00 |
| 53 |  | Еженедельное собрание 25 | 1h | 2025-08-20 09:00 | 2025-08-20 10:00 |  |  | 2.42d | start no earlier than 2025-08-20 09:00 |

## Version 2 (saved 2025-03-11, file task_1.mpp)

Note of the change: Add 03, 04, tasks 05

Last finish 2025-08-22 → 2025-08-15 (-7d). Complete tasks 18 → 0.

Added:

| ID | Task | Duration | Start | Finish | Predecessors | Constraint | Resources |
| --- | --- | --- | --- | --- | --- | --- | --- |
| 17 | Создание мультимедиа-наполнения | 6w | 2025-04-07 16:00 | 2025-05-26 15:00 | 3 |  | Мультимедиа-корреспондент |
| 22 | **Создание web-сайта и поддержка** | 23.38d | 2025-07-04 10:23 | 2025-08-06 14:23 |  |  |  |
| 28 | **Совещание** | 108.75d | 2025-03-05 10:00 | 2025-08-13 11:00 |  |  |  |
| 29 | Совещание 1 | 1h | 2025-03-05 10:00 | 2025-03-05 11:00 |  | start no earlier than 2025-03-05 10:00 | 3D аниматор; Web-дизайнер; Ведущий программист; Мультимедиа-корреспондент; Системный аналитик; Технический писатель; Художник-дизайнер |
| 30 | Совещание 2 | 1h | 2025-03-12 10:00 | 2025-03-12 11:00 |  | start no earlier than 2025-03-12 10:00 | 3D аниматор; Web-дизайнер; Ведущий программист; Мультимедиа-корреспондент; Системный аналитик; Технический писатель; Художник-дизайнер |
| 31 | Совещание 3 | 1h | 2025-03-19 10:00 | 2025-03-19 11:00 |  | start no earlier than 2025-03-19 10:00 | 3D аниматор; Web-дизайнер; Ведущий программист; Мультимедиа-корреспондент; Системный аналитик; Технический писатель; Художник-дизайнер |
| 32 | Совещание 4 | 1h | 2025-03-26 10:00 | 2025-03-26 11:00 |  | start no earlier than 2025-03-26 10:00 | 3D аниматор; Web-дизайнер; Ведущий программист; Мультимедиа-корреспондент; Системный аналитик; Технический писатель; Художник-дизайнер |
| 33 | Совещание 5 | 1h | 2025-04-02 10:00 | 2025-04-02 11:00 |  | start no earlier than 2025-04-02 10:00 | 3D аниматор; Web-дизайнер; Ведущий программист; Мультимедиа-корреспондент; Системный аналитик; Технический писатель; Художник-дизайнер |
| 34 | Совещание 6 | 1h | 2025-04-09 10:00 | 2025-04-09 11:00 |  | start no earlier than 2025-04-09 10:00 | 3D аниматор; Web-дизайнер; Ведущий программист; Мультимедиа-корреспондент; Системный аналитик; Технический писатель; Художник-дизайнер |
| 35 | Совещание 7 | 1h | 2025-04-16 10:00 | 2025-04-16 11:00 |  | start no earlier than 2025-04-16 10:00 | 3D аниматор; Web-дизайнер; Ведущий программист; Мультимедиа-корреспондент; Системный аналитик; Технический писатель; Художник-дизайнер |
| 36 | Совещание 8 | 1h | 2025-04-23 10:00 | 2025-04-23 11:00 |  | start no earlier than 2025-04-23 10:00 | 3D аниматор; Web-дизайнер; Ведущий программист; Мультимедиа-корреспондент; Системный аналитик; Технический писатель; Художник-дизайнер |
| 37 | Совещание 9 | 1h | 2025-04-30 10:00 | 2025-04-30 11:00 |  | start no earlier than 2025-04-30 10:00 | 3D аниматор; Web-дизайнер; Ведущий программист; Мультимедиа-корреспондент; Системный аналитик; Технический писатель; Художник-дизайнер |
| 38 | Совещание 10 | 1h | 2025-05-07 10:00 | 2025-05-07 11:00 |  | start no earlier than 2025-05-07 10:00 | 3D аниматор; Web-дизайнер; Ведущий программист; Мультимедиа-корреспондент; Системный аналитик; Технический писатель; Художник-дизайнер |
| 39 | Совещание 11 | 1h | 2025-05-14 10:00 | 2025-05-14 11:00 |  | start no earlier than 2025-05-14 10:00 | 3D аниматор; Web-дизайнер; Ведущий программист; Мультимедиа-корреспондент; Системный аналитик; Технический писатель; Художник-дизайнер |
| 40 | Совещание 12 | 1h | 2025-05-21 10:00 | 2025-05-21 11:00 |  | start no earlier than 2025-05-21 10:00 | 3D аниматор; Web-дизайнер; Ведущий программист; Мультимедиа-корреспондент; Системный аналитик; Технический писатель; Художник-дизайнер |
| 41 | Совещание 13 | 1h | 2025-05-28 10:00 | 2025-05-28 11:00 |  | start no earlier than 2025-05-28 10:00 | 3D аниматор; Web-дизайнер; Ведущий программист; Мультимедиа-корреспондент; Системный аналитик; Технический писатель; Художник-дизайнер |
| 42 | Совещание 14 | 1h | 2025-06-04 10:00 | 2025-06-04 11:00 |  | start no earlier than 2025-06-04 10:00 | 3D аниматор; Web-дизайнер; Ведущий программист; Мультимедиа-корреспондент; Системный аналитик; Технический писатель; Художник-дизайнер |
| 43 | Совещание 15 | 1h | 2025-06-11 10:00 | 2025-06-11 11:00 |  | start no earlier than 2025-06-11 10:00 | 3D аниматор; Web-дизайнер; Ведущий программист; Мультимедиа-корреспондент; Системный аналитик; Технический писатель; Художник-дизайнер |
| 44 | Совещание 16 | 1h | 2025-06-18 10:00 | 2025-06-18 11:00 |  | start no earlier than 2025-06-18 10:00 | 3D аниматор; Web-дизайнер; Ведущий программист; Мультимедиа-корреспондент; Системный аналитик; Технический писатель; Художник-дизайнер |
| 45 | Совещание 17 | 1h | 2025-06-25 10:00 | 2025-06-25 11:00 |  | start no earlier than 2025-06-25 10:00 | 3D аниматор; Web-дизайнер; Ведущий программист; Мультимедиа-корреспондент; Системный аналитик; Технический писатель; Художник-дизайнер |
| 46 | Совещание 18 | 1h | 2025-07-02 10:00 | 2025-07-02 11:00 |  | start no earlier than 2025-07-02 10:00 | 3D аниматор; Web-дизайнер; Ведущий программист; Мультимедиа-корреспондент; Системный аналитик; Технический писатель; Художник-дизайнер |
| 47 | Совещание 19 | 1h | 2025-07-09 10:00 | 2025-07-09 11:00 |  | start no earlier than 2025-07-09 10:00 | 3D аниматор; Web-дизайнер; Ведущий программист; Мультимедиа-корреспондент; Системный аналитик; Технический писатель; Художник-дизайнер |

Removed: 17 Создание мультимедиа – наполнения; 22 Создание web – сайта и поддержка; 33 Еженедельное собрание 5; 34 Еженедельное собрание 6; 35 Еженедельное собрание 7; 36 Еженедельное собрание 8; 37 Еженедельное собрание 9; 38 Еженедельное собрание 10; 39 Еженедельное собрание 11; 40 Еженедельное собрание 12; 41 Еженедельное собрание 13; 42 Еженедельное собрание 14; 43 Еженедельное собрание 15; 44 Еженедельное собрание 16; 45 Еженедельное собрание 17; 46 Еженедельное собрание 18; 47 Еженедельное собрание 19; 48 Еженедельное собрание 20; 49 Еженедельное собрание 21; 50 Еженедельное собрание 22; 51 Еженедельное собрание 23; 52 Еженедельное собрание 24; 53 Еженедельное собрание 25

Changed:

| ID | Task | Start | Finish | Duration | Complete | Total float | Predecessors | Other |
| --- | --- | --- | --- | --- | --- | --- | --- | --- |
| 1 | Начало проекта | 2025-03-03 09:00 A → 2025-03-03 09:00 | 2025-03-03 09:00 A → 2025-03-03 09:00 | 0d → 0w | 100% → 0% | none → 56.99d |  |  |
| 2 | **Создание интерфейса** | 2025-03-03 09:00 A → 2025-03-03 09:00 | 2025-07-18 08:33 → 2025-07-16 10:23 (-2d) | 92.69d → 90.8d | 88% → 0% |  |  | baseline finish 2025-07-03 16:35 → 2025-07-16 10:23 |
| 3 | **Разработка дизайна интерфейса** | 2025-03-03 09:00 A → 2025-03-03 09:00 | 2025-04-14 16:00 A → 2025-04-07 16:00 (-7d) | 30.62d → 25.62d | 100% → 0% | none → 56.99d |  |  |
| 4 | Разработка 2D графических элементов | 2025-03-03 09:00 A → 2025-03-03 09:00 | 2025-03-31 14:00 A → 2025-03-24 13:00 (-7d) |  | 100% → 0% | none → 56.99d |  | baseline finish 2025-03-24 14:00 → 2025-03-24 13:00 |
| 5 | Разработка 3D графических элементов | 2025-03-03 09:00 A → 2025-03-03 09:00 | 2025-03-17 12:00 A → 2025-03-17 12:00 |  | 100% → 0% | none → 56.99d |  |  |
| 6 | Создание заставки | 2025-03-17 13:00 A → 2025-03-17 12:00 | 2025-04-14 16:00 A → 2025-04-07 16:00 (-7d) | 4w → 3w | 100% → 0% | none → 56.99d |  | baseline start 2025-03-17 13:00 → 2025-03-17 12:00 |
| 7 | Программирование интерфейса | 2025-07-10 08:33 → 2025-07-04 15:23 (-6d) | 2025-07-18 08:33 → 2025-07-16 10:23 (-2d) | 1.2w → 1.5w |  |  |  | resources Прогаммист#4; Программист#3; Программист#1; Программист#2 → Программист#3; Программист#4; Программист#1; Программист#2; baseline start 2025-06-25 16:35 → 2025-07-04 15:23; baseline finish 2025-07-03 16:35 → 2025-07-16 10:23 |
| 8 | **Построение базы объектов** | 2025-03-24 15:00 A → 2025-03-24 15:00 | 2025-07-07 14:34 → 2025-08-08 11:00 (+32d) | 68.82d → 92.38d | 42% → 0% | 33.97d → 5.49d |  | resources Дополнительный сервер → Аренда сервера; baseline finish 2025-07-23 13:01 → 2025-08-08 11:00 |
| 9 | Анализ и построение структуры базы объектов | 2025-03-24 15:00 A → 2025-03-24 15:00 | 2025-04-07 16:00 A → 2025-04-07 16:00 |  | 100% → 0% | none → 5.49d |  |  |
| 10 | Программирование средств обработки базы объектов | 2025-04-07 16:00 A → 2025-04-07 16:00 | 2025-05-13 09:01 → 2025-05-14 10:00 (+1d) | 3.13w → 2.35w | 65% → 0% | 0d → 5.49d |  | resources Прогаммист#4; Программист#3; Программист#2; Программист#1; Ведущий программист → Программист#3; Программист#4; Программист#1; Программист#2; baseline finish 2025-04-22 11:01 → 2025-05-14 10:00 |
| 11 | Наполнение базы объектов | 2025-04-22 11:01 A → 2025-05-14 10:00 (+22d) | 2025-07-07 14:34 → 2025-08-08 11:00 (+32d) | 9.61w → 12w | 22% → 0% | 33.97d → 5.49d |  | resources Наборщик данных#1; Наборщик данных#2; Наборщик данных#3; Наборщик данных#4; Наборщик данных#5; Наборщик данных#6; Наборщик данных#7 → Наборщик данных#1; Наборщик данных#2; Наборщик данных#3; Наборщик данных#4; Наборщик данных#5; baseline start 2025-04-22 11:01 → 2025-05-14 10:00; baseline finish 2025-07-23 13:01 → 2025-08-08 11:00 |
| 12 | **Создание ядра GIS** | 2025-03-03 09:00 A → 2025-03-03 09:00 | 2025-07-10 08:33 → 2025-07-04 15:23 (-6d) | 86.69d → 83.3d | 41% → 0% |  |  | baseline finish 2025-06-25 16:35 → 2025-07-04 15:23 |
| 13 | Анализ и проектирование ядра | 2025-03-03 09:00 A → 2025-03-03 09:00 | 2025-03-24 14:00 A → 2025-03-24 13:00 |  | 100% → 0% | none → 0d |  | baseline finish 2025-03-24 14:00 → 2025-03-24 13:00 |
| 14 | Создание модели ядра | 2025-03-24 14:00 A → 2025-03-24 14:00 | 2025-04-07 14:49 A → 2025-05-07 15:00 (+30d) | 2.02w → 5.97w | 100% → 0% | none → 0d |  | resources Ведущий программист; Программист#1; Программист#2; Прогаммист#4; Программист#3 → Ведущий программист; Программист#1; baseline finish 2025-04-07 14:49 → 2025-05-07 15:00 |
| 15 | Тестирование модели ядра | 2025-04-07 14:49 A → 2025-05-14 10:00 (+37d) | 2025-04-10 09:49 A → 2025-05-21 10:00 (+41d) | 0.5w → 1w | 100% → 0% | none → 0d |  | baseline start 2025-04-07 14:49 → 2025-05-14 10:00; baseline finish 2025-04-10 09:49 → 2025-05-21 10:00 |
| 16 | Создание рабочей версии ядра | 2025-04-14 13:51 A → 2025-05-21 10:00 (+37d) | 2025-07-10 08:33 → 2025-07-04 15:23 (-6d) | 10.46w → 6.08w | 9% → 0% |  |  | resources Ведущий программист; Программист#1; Программист#2; Прогаммист#4 → Ведущий программист; Программист#1; Программист#2; Программист#3; Программист#4; baseline start 2025-04-14 13:51 → 2025-05-21 10:00; baseline finish 2025-06-25 16:35 → 2025-07-04 15:23 |
| 18 | Создание справочной системы | 2025-07-29 11:33 → 2025-07-25 14:23 (-4d) | 2025-08-12 13:33 → 2025-08-08 15:23 (-4d) |  |  | 8.1d → 5.07d |  | baseline start 2025-07-15 10:35 → 2025-07-25 14:23; baseline finish 2025-07-29 11:35 → 2025-08-08 15:23 |
| 19 | **Создание руководства пользователя** | 2025-07-04 08:33 → 2025-07-02 10:23 (-2d) | 2025-07-29 10:33 → 2025-07-25 12:23 (-4d) |  |  |  |  | baseline start 2025-06-19 16:35 → 2025-07-02 10:23; baseline finish 2025-07-15 09:35 → 2025-07-25 12:23 |
| 20 | Разработка дизайна руководства | 2025-07-04 08:33 → 2025-07-02 10:23 (-2d) | 2025-07-11 08:33 → 2025-07-09 10:23 (-2d) |  |  |  |  | baseline start 2025-06-19 16:35 → 2025-07-02 10:23; baseline finish 2025-06-26 16:35 → 2025-07-09 10:23 |
| 21 | Написание руководства пользователя | 2025-07-08 08:33 → 2025-07-04 10:23 (-4d) | 2025-07-29 10:33 → 2025-07-25 12:23 (-4d) |  |  |  |  | baseline start 2025-06-23 16:35 → 2025-07-04 10:23; baseline finish 2025-07-15 09:35 → 2025-07-25 12:23 |
| 23 | Разработка структуры сайта | 2025-07-08 08:33 → 2025-07-04 10:23 (-4d) | 2025-07-09 08:33 → 2025-07-07 10:23 (-2d) |  |  |  |  | baseline start 2025-06-23 16:35 → 2025-07-04 10:23; baseline finish 2025-06-24 16:35 → 2025-07-07 10:23 |
| 24 | Разработка дизайна сайта | 2025-07-09 08:33 → 2025-07-07 10:23 (-2d) | 2025-07-18 09:33 → 2025-07-16 11:23 (-2d) |  |  |  |  | resources Web-дизайнер; Художник-дизайнер; 3D аниматор → Web-дизайнер; 3D аниматор; Художник-дизайнер; baseline start 2025-06-24 16:35 → 2025-07-07 10:23; baseline finish 2025-07-04 08:35 → 2025-07-16 11:23 |
| 25 | Наполнение сайта | 2025-07-18 09:33 → 2025-07-16 11:23 (-2d) | 2025-08-08 11:33 → 2025-08-06 14:23 (-2d) |  |  |  |  | baseline start 2025-07-04 08:35 → 2025-07-16 11:23; baseline finish 2025-07-25 10:35 → 2025-08-06 14:23 |
| 26 | Тестирование сайта | 2025-08-01 11:33 → 2025-07-30 14:23 (-2d) | 2025-08-22 14:22 → 2025-08-15 15:56 (-7d) | 3.05w → 2.44w |  |  | Создание web – сайта и поддержкаFS-1w → 22FS-1w | resources Ведущий программист; Программист#1; Программист#2; Программист#3 → Ведущий программист; Программист#1; Программист#2; Программист#3; Программист#4; baseline start 2025-07-18 10:35 → 2025-07-30 14:23; baseline finish 2025-08-05 11:53 → 2025-08-15 15:56 |
| 27 | Сдача сайта в эксплуатацию | 2025-08-22 14:22 → 2025-08-15 15:56 (-7d) | 2025-08-22 14:22 → 2025-08-15 15:56 (-7d) | 0d → 0w |  |  |  | baseline start 2025-08-05 11:53 → 2025-08-15 15:56; baseline finish 2025-08-05 11:53 → 2025-08-15 15:56 |
| 48 | Совещание 20 | 2025-03-05 09:00 A → 2025-07-16 10:00 (+133d) | 2025-08-20 10:00 → 2025-07-16 11:00 (-35d) | 113.88d → 1h | 40% → 0% | 2.42d → 22.49d |  | was named Еженедельное собрание; constraint none → start no earlier than 2025-07-16 10:00; resources none → 3D аниматор; Web-дизайнер; Ведущий программист; Мультимедиа-корреспондент; Системный аналитик; Технический писатель; Художник-дизайнер; baseline start 2025-03-05 09:00 → 2025-07-16 10:00; baseline finish 2025-08-06 10:00 → 2025-07-16 11:00 |
| 49 | Совещание 21 | 2025-03-05 09:00 A → 2025-07-23 10:00 (+140d) | 2025-03-05 10:00 A → 2025-07-23 11:00 (+140d) |  | 100% → 0% | none → 17.49d |  | was named Еженедельное собрание 1; constraint start no earlier than 2025-03-05 09:00 → start no earlier than 2025-07-23 10:00; baseline start 2025-03-05 09:00 → 2025-07-23 10:00; baseline finish 2025-03-05 10:00 → 2025-07-23 11:00 |
| 50 | Совещание 22 | 2025-03-12 09:00 A → 2025-07-30 10:00 (+140d) | 2025-03-12 10:00 A → 2025-07-30 11:00 (+140d) |  | 100% → 0% | none → 12.49d |  | was named Еженедельное собрание 2; constraint start no earlier than 2025-03-12 09:00 → start no earlier than 2025-07-30 10:00; baseline start 2025-03-12 09:00 → 2025-07-30 10:00; baseline finish 2025-03-12 10:00 → 2025-07-30 11:00 |
| 51 | Совещание 23 | 2025-03-19 09:00 A → 2025-08-06 10:00 (+140d) | 2025-03-19 10:00 A → 2025-08-06 11:00 (+140d) |  | 100% → 0% | none → 7.49d |  | was named Еженедельное собрание 3; constraint start no earlier than 2025-03-19 09:00 → start no earlier than 2025-08-06 10:00; baseline start 2025-03-19 09:00 → 2025-08-06 10:00; baseline finish 2025-03-19 10:00 → 2025-08-06 11:00 |
| 52 | Совещание 24 | 2025-03-26 09:00 A → 2025-08-13 10:00 (+140d) | 2025-03-26 10:00 A → 2025-08-13 11:00 (+140d) |  | 100% → 0% | none → 2.49d |  | was named Еженедельное собрание 4; constraint start no earlier than 2025-03-26 09:00 → start no earlier than 2025-08-13 10:00; baseline start 2025-03-26 09:00 → 2025-08-13 10:00; baseline finish 2025-03-26 10:00 → 2025-08-13 11:00 |

## Version 3 (data date 2025-05-15, saved 2025-03-17, file task_1_new.mpp)

Note of the change: Add 03, 04, tasks 05

Last finish 2025-08-15 → 2025-08-18 (+3d).

Changed:

| ID | Task | Start | Finish | Duration | Total float | Other |
| --- | --- | --- | --- | --- | --- | --- |
| 2 | **Создание интерфейса** |  | 2025-07-16 10:23 → 2025-07-16 11:48 | 90.8d → 90.98d |  | baseline finish 2025-07-16 10:23 → 2025-07-16 11:48 |
| 3 | **Разработка дизайна интерфейса** |  | 2025-04-07 16:00 → 2025-04-14 16:00 (+7d) | 25.62d → 30.62d | 56.99d → 52.3d |  |
| 5 | Разработка 3D графических элементов |  | 2025-03-17 12:00 → 2025-03-24 12:00 (+7d) |  | 56.99d → 52.3d |  |
| 6 | Создание заставки | 2025-03-17 12:00 → 2025-03-24 12:00 (+7d) | 2025-04-07 16:00 → 2025-04-14 16:00 (+7d) |  | 56.99d → 52.3d |  |
| 7 | Программирование интерфейса | 2025-07-04 15:23 → 2025-07-04 16:48 | 2025-07-16 10:23 → 2025-07-16 11:48 |  |  | baseline start 2025-07-04 15:23 → 2025-07-04 16:48; baseline finish 2025-07-16 10:23 → 2025-07-16 11:48 |
| 8 | **Построение базы объектов** | 2025-03-24 15:00 → 2025-03-24 14:00 |  | 92.38d → 92.5d | 5.49d → 5.92d | baseline start 2025-03-24 15:00 → 2025-03-24 14:00 |
| 9 | Анализ и построение структуры базы объектов | 2025-03-24 15:00 → 2025-03-24 14:00 |  |  | 5.49d → 5.92d | baseline start 2025-03-24 15:00 → 2025-03-24 14:00 |
| 10 | Программирование средств обработки базы объектов |  |  | 2.35w → 3w | 5.49d → 5.92d |  |
| 12 | **Создание ядра GIS** |  | 2025-07-04 15:23 → 2025-07-04 16:48 | 83.3d → 83.48d |  | baseline finish 2025-07-04 15:23 → 2025-07-04 16:48 |
| 13 | Анализ и проектирование ядра |  |  | 3.08w → 3w |  |  |
| 14 | Создание модели ядра |  | 2025-05-07 15:00 → 2025-04-29 10:00 (-8d) | 5.97w → 5.12w |  | baseline finish 2025-05-07 15:00 → 2025-04-29 10:00 |
| 16 | Создание рабочей версии ядра |  | 2025-07-04 15:23 → 2025-07-04 16:48 | 6.08w → 6.12w |  | baseline finish 2025-07-04 15:23 → 2025-07-04 16:48 |
| 17 | Создание мультимедиа-наполнения | 2025-04-07 16:00 → 2025-04-14 16:00 (+7d) | 2025-05-26 15:00 → 2025-06-02 16:00 (+7d) |  | 56.99d → 52.3d | baseline finish 2025-05-26 15:00 → 2025-05-26 16:00 |
| 18 | Создание справочной системы | 2025-07-25 14:23 → 2025-07-25 15:48 | 2025-08-08 15:23 → 2025-08-08 17:48 |  | 5.07d → 5.19d | baseline start 2025-07-25 14:23 → 2025-07-25 15:48; baseline finish 2025-08-08 15:23 → 2025-08-08 17:48 |
| 19 | **Создание руководства пользователя** | 2025-07-02 10:23 → 2025-07-02 11:48 | 2025-07-25 12:23 → 2025-07-25 15:48 | 17.25d → 17.38d |  | baseline start 2025-07-02 10:23 → 2025-07-02 11:48; baseline finish 2025-07-25 12:23 → 2025-07-25 15:48 |
| 20 | Разработка дизайна руководства | 2025-07-02 10:23 → 2025-07-02 11:48 | 2025-07-09 10:23 → 2025-07-09 12:48 |  |  | baseline start 2025-07-02 10:23 → 2025-07-02 11:48; baseline finish 2025-07-09 10:23 → 2025-07-09 12:48 |
| 21 | Написание руководства пользователя | 2025-07-04 10:23 → 2025-07-04 11:48 | 2025-07-25 12:23 → 2025-07-25 15:48 |  |  | baseline start 2025-07-04 10:23 → 2025-07-04 11:48; baseline finish 2025-07-25 12:23 → 2025-07-25 15:48 |
| 22 | **Создание web-сайта и поддержка** | 2025-07-04 10:23 → 2025-07-04 11:48 | 2025-08-06 14:23 → 2025-08-06 17:48 | 23.38d → 23.62d |  | baseline start 2025-07-04 10:23 → 2025-07-04 11:48; baseline finish 2025-08-06 14:23 → 2025-08-06 17:48 |
| 23 | Разработка структуры сайта | 2025-07-04 10:23 → 2025-07-04 11:48 | 2025-07-07 10:23 → 2025-07-07 11:48 |  |  | baseline start 2025-07-04 10:23 → 2025-07-04 11:48; baseline finish 2025-07-07 10:23 → 2025-07-07 11:48 |
| 24 | Разработка дизайна сайта | 2025-07-07 10:23 → 2025-07-07 11:48 | 2025-07-16 11:23 → 2025-07-16 14:48 | 1.43w → 1.4w |  | baseline start 2025-07-07 10:23 → 2025-07-07 11:48; baseline finish 2025-07-16 11:23 → 2025-07-16 14:48 |
| 25 | Наполнение сайта | 2025-07-16 11:23 → 2025-07-16 14:48 | 2025-08-06 14:23 → 2025-08-06 17:48 |  |  | baseline start 2025-07-16 11:23 → 2025-07-16 14:48; baseline finish 2025-08-06 14:23 → 2025-08-06 17:48 |
| 26 | Тестирование сайта | 2025-07-30 14:23 → 2025-07-30 17:48 | 2025-08-15 15:56 → 2025-08-18 10:22 (+3d) |  |  | baseline start 2025-07-30 14:23 → 2025-07-30 17:48; baseline finish 2025-08-15 15:56 → 2025-08-18 10:22 |
| 27 | Сдача сайта в эксплуатацию | 2025-08-15 15:56 → 2025-08-18 10:22 (+3d) | 2025-08-15 15:56 → 2025-08-18 10:22 (+3d) |  |  | baseline start 2025-08-15 15:56 → 2025-08-18 10:22; baseline finish 2025-08-15 15:56 → 2025-08-18 10:22 |

## Version 4 (data date 2025-05-15, saved 2025-03-17, file task_2_new.mpp)

Note of the change: Add 03, 04, tasks 05

Last finish stays 2025-08-18.

Changed:

| ID | Task | Start | Finish | Duration |
| --- | --- | --- | --- | --- |
| 8 | **Построение базы объектов** | 2025-03-24 14:00 → 2025-03-26 09:00 A (+2d) |  | 92.5d → 91d |
| 9 | Анализ и построение структуры базы объектов | 2025-03-24 14:00 → 2025-03-26 09:00 A (+2d) | 2025-04-07 16:00 → 2025-04-09 12:00 (+2d) |  |
| 10 | Программирование средств обработки базы объектов | 2025-04-07 16:00 → 2025-04-09 12:00 (+2d) |  |  |

## Version 5 (data date 2025-05-15, saved 2025-03-17, file task_3_new.mpp)

Note of the change: Add 03, 04, tasks 05

Last finish stays 2025-08-18.

Changed:

| ID | Task | Start | Complete |
| --- | --- | --- | --- |
| 8 | **Построение базы объектов** |  | 0% → 14% |
| 10 | Программирование средств обработки базы объектов | 2025-04-09 12:00 A | 0% → 80% |

## Version 6 (data date 2025-05-15, saved 2025-03-17, file task_4_new.mpp)

Note of the change: Add 03, 04, tasks 05

Last finish 2025-08-18 → 2025-08-25 (+7d).

Changed:

| ID | Task | Start | Finish | Duration | Total float |
| --- | --- | --- | --- | --- | --- |
| 2 | **Создание интерфейса** |  | 2025-07-16 11:48 → 2025-07-23 11:48 (+7d) | 90.98d → 95.98d |  |
| 7 | Программирование интерфейса | 2025-07-04 16:48 → 2025-07-11 16:48 (+7d) | 2025-07-16 11:48 → 2025-07-23 11:48 (+7d) |  |  |
| 8 | **Построение базы объектов** |  | 2025-08-08 11:00 → 2025-08-08 16:00 | 91d → 91.5d | 5.92d → 10.42d |
| 9 | Анализ и построение структуры базы объектов |  | 2025-04-09 12:00 → 2025-04-14 16:00 (+5d) |  | 5.92d → 14.75d |
| 10 | Программирование средств обработки базы объектов |  | 2025-05-14 10:00 → 2025-05-14 15:00 |  | 5.92d → 10.42d |
| 11 | Наполнение базы объектов | 2025-05-14 10:00 → 2025-05-14 15:00 | 2025-08-08 11:00 → 2025-08-08 16:00 |  | 5.92d → 10.42d |
| 12 | **Создание ядра GIS** |  | 2025-07-04 16:48 → 2025-07-11 16:48 (+7d) | 83.48d → 88.48d |  |
| 13 | Анализ и проектирование ядра |  | 2025-03-24 13:00 → 2025-03-31 13:00 (+7d) |  |  |
| 14 | Создание модели ядра | 2025-03-24 14:00 → 2025-03-31 14:00 (+7d) | 2025-04-29 10:00 → 2025-05-21 10:00 (+22d) | 5.12w → 6.03w |  |
| 15 | Тестирование модели ядра | 2025-05-14 10:00 → 2025-05-21 10:00 (+7d) | 2025-05-21 10:00 → 2025-05-28 10:00 (+7d) |  |  |
| 16 | Создание рабочей версии ядра | 2025-05-21 10:00 → 2025-05-28 10:00 (+7d) | 2025-07-04 16:48 → 2025-07-11 16:48 (+7d) |  |  |
| 18 | Создание справочной системы | 2025-07-25 15:48 → 2025-08-01 15:48 (+7d) | 2025-08-08 17:48 → 2025-08-15 17:48 (+7d) |  |  |
| 19 | **Создание руководства пользователя** | 2025-07-02 11:48 → 2025-07-09 11:48 (+7d) | 2025-07-25 15:48 → 2025-08-01 15:48 (+7d) |  |  |
| 20 | Разработка дизайна руководства | 2025-07-02 11:48 → 2025-07-09 11:48 (+7d) | 2025-07-09 12:48 → 2025-07-16 12:48 (+7d) |  |  |
| 21 | Написание руководства пользователя | 2025-07-04 11:48 → 2025-07-11 11:48 (+7d) | 2025-07-25 15:48 → 2025-08-01 15:48 (+7d) |  |  |
| 22 | **Создание web-сайта и поддержка** | 2025-07-04 11:48 → 2025-07-11 11:48 (+7d) | 2025-08-06 17:48 → 2025-08-13 17:48 (+7d) |  |  |
| 23 | Разработка структуры сайта | 2025-07-04 11:48 → 2025-07-11 11:48 (+7d) | 2025-07-07 11:48 → 2025-07-14 11:48 (+7d) |  |  |
| 24 | Разработка дизайна сайта | 2025-07-07 11:48 → 2025-07-14 11:48 (+7d) | 2025-07-16 14:48 → 2025-07-23 14:48 (+7d) |  |  |
| 25 | Наполнение сайта | 2025-07-16 14:48 → 2025-07-23 14:48 (+7d) | 2025-08-06 17:48 → 2025-08-13 17:48 (+7d) |  |  |
| 26 | Тестирование сайта | 2025-07-30 17:48 → 2025-08-06 17:48 (+7d) | 2025-08-18 10:22 → 2025-08-25 10:22 (+7d) |  |  |
| 27 | Сдача сайта в эксплуатацию | 2025-08-18 10:22 → 2025-08-25 10:22 (+7d) | 2025-08-18 10:22 → 2025-08-25 10:22 (+7d) |  |  |

## Version 7 (data date 2025-05-15, saved 2025-03-18, file task_5_6_7_fix_new_wrong.mpp)

Note of the change: Add 03, 04, tasks 05

Last finish 2025-08-25 → 2025-08-18 (-7d). Complete tasks 0 → 17.

Changed:

| ID | Task | Start | Finish | Duration | Complete | Total float | Other |
| --- | --- | --- | --- | --- | --- | --- | --- |
| 1 | Начало проекта | 2025-03-03 09:00 A | 2025-03-03 09:00 A |  | 0% → 100% | 57.3d → none |  |
| 2 | **Создание интерфейса** | 2025-03-03 09:00 A | 2025-07-23 11:48 → 2025-07-15 15:20 (-8d) | 95.98d → 90.29d | 0% → 84% |  |  |
| 3 | **Разработка дизайна интерфейса** | 2025-03-03 09:00 A | 2025-04-14 16:00 A |  | 0% → 100% | 57.3d → none |  |
| 4 | Разработка 2D графических элементов | 2025-03-03 09:00 A | 2025-03-24 13:00 A |  | 0% → 100% | 57.3d → none |  |
| 5 | Разработка 3D графических элементов | 2025-03-03 09:00 A | 2025-03-24 12:00 A |  | 0% → 100% | 57.3d → none |  |
| 6 | Создание заставки | 2025-03-24 12:00 A | 2025-04-14 16:00 A |  | 0% → 100% | 57.3d → none |  |
| 7 | Программирование интерфейса | 2025-07-11 16:48 → 2025-07-04 10:20 (-7d) | 2025-07-23 11:48 → 2025-07-15 15:20 (-8d) |  |  |  | resources Программист#3; Программист#4; Программист#1; Программист#2 → Программист#3; Программист#2 |
| 8 | **Построение базы объектов** |  | 2025-08-08 16:00 → 2025-08-08 18:00 | 91.5d → 91.75d | 14% → 26% | 10.42d → 5.42d | resources Аренда сервера → Аренда сервера; Собственный сервер |
| 9 | Анализ и построение структуры базы объектов |  | 2025-04-14 16:00 A |  | 0% → 100% | 14.75d → none |  |
| 10 | Программирование средств обработки базы объектов |  | 2025-05-14 15:00 → 2025-05-14 17:00 |  |  | 10.42d → 14.87d |  |
| 11 | Наполнение базы объектов | 2025-05-14 15:00 → 2025-05-14 17:00 | 2025-08-08 16:00 → 2025-08-08 18:00 |  |  | 10.42d → 14.87d |  |
| 12 | **Создание ядра GIS** | 2025-03-03 09:00 A | 2025-07-11 16:48 → 2025-07-04 10:20 (-7d) | 88.48d → 82.79d | 0% → 51% |  |  |
| 13 | Анализ и проектирование ядра | 2025-03-03 09:00 A | 2025-03-31 13:00 A |  | 0% → 100% | 0d → none |  |
| 14 | Создание модели ядра | 2025-03-31 14:00 A | 2025-05-21 10:00 → 2025-05-13 10:00 A (-8d) | 6.03w → 5w | 0% → 100% | 0d → none | resources Ведущий программист; Программист#1 → Ведущий программист [80%]; Программист#1 |
| 15 | Тестирование модели ядра | 2025-05-21 10:00 → 2025-05-16 09:00 (-5d) | 2025-05-28 10:00 → 2025-05-20 14:57 (-8d) | 1w → 0.52w |  |  | resources Программист#1 → Программист#2; Программист#3 |
| 16 | Создание рабочей версии ядра | 2025-05-28 10:00 → 2025-05-20 14:57 (-8d) | 2025-07-11 16:48 → 2025-07-04 10:20 (-7d) | 6.12w → 7.21w |  |  | resources Ведущий программист; Программист#1; Программист#2; Программист#3; Программист#4 → Программист#1; Программист#2; Программист#3; Программист#4 |
| 17 | Создание мультимедиа-наполнения | 2025-04-14 16:00 A |  |  | 0% → 58% | 57.3d → 52.55d | resources Мультимедиа-корреспондент → Мультимедиа-корреспондент; Специализированное ПО |
| 18 | Создание справочной системы | 2025-08-01 15:48 → 2025-07-28 09:00 (-4d) | 2025-08-15 17:48 → 2025-08-11 13:00 (-4d) |  |  | 5.19d → 4.92d |  |
| 19 | **Создание руководства пользователя** | 2025-07-09 11:48 → 2025-07-01 15:20 (-8d) | 2025-08-01 15:48 → 2025-07-25 12:20 (-7d) | 17.38d → 17.75d |  |  |  |
| 20 | Разработка дизайна руководства | 2025-07-09 11:48 → 2025-07-01 15:20 (-8d) | 2025-07-16 12:48 → 2025-07-08 17:20 (-8d) |  |  |  |  |
| 21 | Написание руководства пользователя | 2025-07-11 11:48 → 2025-07-03 15:20 (-8d) | 2025-08-01 15:48 → 2025-07-25 12:20 (-7d) |  |  |  |  |
| 22 | **Создание web-сайта и поддержка** | 2025-07-11 11:48 → 2025-07-03 15:20 (-8d) | 2025-08-13 17:48 → 2025-08-06 16:20 (-7d) | 23.62d → 24.12d |  |  |  |
| 23 | Разработка структуры сайта | 2025-07-11 11:48 → 2025-07-03 15:20 (-8d) | 2025-07-14 11:48 → 2025-07-04 15:20 (-10d) |  |  |  |  |
| 24 | Разработка дизайна сайта | 2025-07-14 11:48 → 2025-07-04 15:20 (-10d) | 2025-07-23 14:48 → 2025-07-16 09:20 (-7d) | 1.4w → 1.38w |  |  |  |
| 25 | Наполнение сайта | 2025-07-23 14:48 → 2025-07-16 09:20 (-7d) | 2025-08-13 17:48 → 2025-08-06 16:20 (-7d) |  |  |  |  |
| 26 | Тестирование сайта | 2025-08-06 17:48 → 2025-07-30 16:20 (-7d) | 2025-08-25 10:22 → 2025-08-18 12:22 (-7d) | 2.44w → 2.53w |  |  | resources Ведущий программист; Программист#1; Программист#2; Программист#3; Программист#4 → Программист#2; Программист#3; Программист#4 |
| 27 | Сдача сайта в эксплуатацию | 2025-08-25 10:22 → 2025-08-18 12:22 (-7d) | 2025-08-25 10:22 → 2025-08-18 12:22 (-7d) |  |  |  |  |
| 28 | **Совещание** | 2025-03-05 10:00 A |  |  | 0% → 46% | 7.92d → 3.17d |  |
| 29 | Совещание 1 | 2025-03-05 10:00 A | 2025-03-05 11:00 A |  | 0% → 100% | 116.55d → none |  |
| 30 | Совещание 2 | 2025-03-12 10:00 A |  |  | 0% → 99% | 111.67d → 116.37d |  |
| 31 | Совещание 3 | 2025-03-19 10:00 A | 2025-03-19 11:00 A |  | 0% → 100% | 106.67d → none |  |
| 32 | Совещание 4 | 2025-03-26 10:00 A | 2025-03-26 11:00 A |  | 0% → 100% | 101.67d → none |  |
| 33 | Совещание 5 | 2025-04-02 10:00 A | 2025-04-02 11:00 A |  | 0% → 100% | 96.67d → none |  |
| 34 | Совещание 6 | 2025-04-09 10:00 A | 2025-04-09 11:00 A |  | 0% → 100% | 91.67d → none | resources 3D аниматор; Web-дизайнер; Ведущий программист; Мультимедиа-корреспондент; Системный аналитик; Технический писатель; Художник-дизайнер → 3D аниматор; Web-дизайнер; Ведущий программист [80%]; Мультимедиа-корреспондент; Системный аналитик; Технический писатель; Художник-дизайнер |
| 35 | Совещание 7 | 2025-04-16 10:00 A | 2025-04-16 11:00 A |  | 0% → 100% | 86.67d → none | resources 3D аниматор; Web-дизайнер; Ведущий программист; Мультимедиа-корреспондент; Системный аналитик; Технический писатель; Художник-дизайнер → 3D аниматор; Web-дизайнер; Ведущий программист [80%]; Мультимедиа-корреспондент; Системный аналитик; Технический писатель; Художник-дизайнер |
| 36 | Совещание 8 | 2025-04-23 10:00 A | 2025-04-23 11:00 A |  | 0% → 100% | 81.67d → none | resources 3D аниматор; Web-дизайнер; Ведущий программист; Мультимедиа-корреспондент; Системный аналитик; Технический писатель; Художник-дизайнер → 3D аниматор; Web-дизайнер; Мультимедиа-корреспондент; Системный аналитик; Технический писатель; Художник-дизайнер; Программист#1 |
| 37 | Совещание 9 | 2025-04-30 10:00 A | 2025-04-30 11:00 A |  | 0% → 100% | 76.67d → none | resources 3D аниматор; Web-дизайнер; Ведущий программист; Мультимедиа-корреспондент; Системный аналитик; Технический писатель; Художник-дизайнер → 3D аниматор; Web-дизайнер; Мультимедиа-корреспондент; Системный аналитик; Технический писатель; Художник-дизайнер; Программист#1 |
| 38 | Совещание 10 | 2025-05-07 10:00 A | 2025-05-07 11:00 A |  | 0% → 100% | 73.8d → none | resources 3D аниматор; Web-дизайнер; Ведущий программист; Мультимедиа-корреспондент; Системный аналитик; Технический писатель; Художник-дизайнер → 3D аниматор; Web-дизайнер; Мультимедиа-корреспондент; Системный аналитик; Технический писатель; Художник-дизайнер; Программист#1 |
| 39 | Совещание 11 | 2025-05-14 10:00 A | 2025-05-14 11:00 A |  | 0% → 100% | 70.8d → none | resources 3D аниматор; Web-дизайнер; Ведущий программист; Мультимедиа-корреспондент; Системный аналитик; Технический писатель; Художник-дизайнер → 3D аниматор; Web-дизайнер; Мультимедиа-корреспондент; Системный аналитик; Технический писатель; Художник-дизайнер; Программист#1 |
| 40 | Совещание 12 |  |  |  |  | 65.8d → 70.49d | resources 3D аниматор; Web-дизайнер; Ведущий программист; Мультимедиа-корреспондент; Системный аналитик; Технический писатель; Художник-дизайнер → 3D аниматор; Web-дизайнер; Мультимедиа-корреспондент; Системный аналитик; Технический писатель; Художник-дизайнер; Программист#1 |
| 41 | Совещание 13 |  |  |  |  | 60.8d → 65.49d | resources 3D аниматор; Web-дизайнер; Ведущий программист; Мультимедиа-корреспондент; Системный аналитик; Технический писатель; Художник-дизайнер → 3D аниматор; Web-дизайнер; Мультимедиа-корреспондент; Системный аналитик; Технический писатель; Художник-дизайнер; Программист#1 |
| 42 | Совещание 14 |  |  |  |  | 55.8d → 60.49d | resources 3D аниматор; Web-дизайнер; Ведущий программист; Мультимедиа-корреспондент; Системный аналитик; Технический писатель; Художник-дизайнер → 3D аниматор; Web-дизайнер; Мультимедиа-корреспондент; Системный аналитик; Технический писатель; Художник-дизайнер; Программист#1 |
| 43 | Совещание 15 |  |  |  |  | 50.8d → 55.49d | resources 3D аниматор; Web-дизайнер; Ведущий программист; Мультимедиа-корреспондент; Системный аналитик; Технический писатель; Художник-дизайнер → 3D аниматор; Web-дизайнер; Мультимедиа-корреспондент; Системный аналитик; Технический писатель; Художник-дизайнер; Программист#1 |
| 44 | Совещание 16 |  |  |  |  | 47.92d → 52.62d | resources 3D аниматор; Web-дизайнер; Ведущий программист; Мультимедиа-корреспондент; Системный аналитик; Технический писатель; Художник-дизайнер → 3D аниматор; Web-дизайнер; Мультимедиа-корреспондент; Системный аналитик; Технический писатель; Художник-дизайнер; Программист#1 |
| 45 | Совещание 17 |  |  |  |  | 42.92d → 47.62d | resources 3D аниматор; Web-дизайнер; Ведущий программист; Мультимедиа-корреспондент; Системный аналитик; Технический писатель; Художник-дизайнер → 3D аниматор; Web-дизайнер; Мультимедиа-корреспондент; Системный аналитик; Технический писатель; Художник-дизайнер; Программист#1 |
| 46 | Совещание 18 |  |  |  |  | 37.92d → 42.62d | resources 3D аниматор; Web-дизайнер; Ведущий программист; Мультимедиа-корреспондент; Системный аналитик; Технический писатель; Художник-дизайнер → 3D аниматор; Web-дизайнер; Мультимедиа-корреспондент; Системный аналитик; Технический писатель; Художник-дизайнер; Программист#1 |
| 47 | Совещание 19 |  |  |  |  | 32.92d → 37.62d | resources 3D аниматор; Web-дизайнер; Ведущий программист; Мультимедиа-корреспондент; Системный аналитик; Технический писатель; Художник-дизайнер → 3D аниматор; Web-дизайнер; Мультимедиа-корреспондент; Системный аналитик; Технический писатель; Художник-дизайнер; Программист#1 |
| 48 | Совещание 20 |  |  |  |  | 27.92d → 32.62d | resources 3D аниматор; Web-дизайнер; Ведущий программист; Мультимедиа-корреспондент; Системный аналитик; Технический писатель; Художник-дизайнер → 3D аниматор; Web-дизайнер; Мультимедиа-корреспондент; Системный аналитик; Технический писатель; Художник-дизайнер; Программист#1 |
| 49 | Совещание 21 |  |  |  |  | 22.92d → 27.62d | resources 3D аниматор; Web-дизайнер; Ведущий программист; Мультимедиа-корреспондент; Системный аналитик; Технический писатель; Художник-дизайнер → 3D аниматор; Web-дизайнер; Мультимедиа-корреспондент; Системный аналитик; Технический писатель; Художник-дизайнер; Программист#1 |
| 50 | Совещание 22 |  |  |  |  | 17.92d → 22.62d | resources 3D аниматор; Web-дизайнер; Ведущий программист; Мультимедиа-корреспондент; Системный аналитик; Технический писатель; Художник-дизайнер → 3D аниматор; Web-дизайнер; Мультимедиа-корреспондент; Системный аналитик; Технический писатель; Художник-дизайнер; Программист#1 |
| 51 | Совещание 23 |  |  |  |  | 12.92d → 17.62d | resources 3D аниматор; Web-дизайнер; Ведущий программист; Мультимедиа-корреспондент; Системный аналитик; Технический писатель; Художник-дизайнер → 3D аниматор; Web-дизайнер; Мультимедиа-корреспондент; Системный аналитик; Технический писатель; Художник-дизайнер; Программист#1 |
| 52 | Совещание 24 |  |  |  |  | 7.92d → 12.62d | resources 3D аниматор; Web-дизайнер; Ведущий программист; Мультимедиа-корреспондент; Системный аналитик; Технический писатель; Художник-дизайнер → 3D аниматор; Web-дизайнер; Мультимедиа-корреспондент; Системный аналитик; Технический писатель; Художник-дизайнер; Программист#1 |

## Version 8 (data date 2025-05-15, saved 2025-03-18, file task_5_6_7_fix_wrong.mpp)

Note of the change: Add 03, 04, tasks 05

Last finish 2025-08-18 → 2025-08-22 (+4d).

Changed:

| ID | Task | Start | Finish | Duration | Complete | Total float | Other |
| --- | --- | --- | --- | --- | --- | --- | --- |
| 2 | **Создание интерфейса** |  | 2025-07-15 15:20 → 2025-07-17 15:23 (+2d) | 90.29d → 92.3d | 84% → 83% |  |  |
| 7 | Программирование интерфейса | 2025-07-04 10:20 → 2025-07-08 10:23 (+4d) | 2025-07-15 15:20 → 2025-07-17 15:23 (+2d) | 1.5w → 1.68w |  |  | resources Программист#3; Программист#2 → Программист#3; Программист#4; Программист#1; Программист#2 |
| 12 | **Создание ядра GIS** |  | 2025-07-04 10:20 → 2025-07-08 10:23 (+4d) | 82.79d → 84.8d | 51% → 49% |  |  |
| 15 | Тестирование модели ядра |  | 2025-05-20 14:57 → 2025-05-22 15:00 (+2d) | 0.52w → 1w |  |  | resources Программист#2; Программист#3 → Программист#1 |
| 16 | Создание рабочей версии ядра | 2025-05-20 14:57 → 2025-05-22 15:00 (+2d) | 2025-07-04 10:20 → 2025-07-08 10:23 (+4d) |  |  |  |  |
| 18 | Создание справочной системы | 2025-07-28 09:00 → 2025-07-29 12:23 (+1d) | 2025-08-11 13:00 → 2025-08-12 17:23 (+1d) |  |  | 4.92d → 7.61d |  |
| 19 | **Создание руководства пользователя** | 2025-07-01 15:20 → 2025-07-03 15:23 (+2d) | 2025-07-25 12:20 → 2025-07-29 12:23 (+4d) |  |  |  |  |
| 20 | Разработка дизайна руководства | 2025-07-01 15:20 → 2025-07-03 15:23 (+2d) | 2025-07-08 17:20 → 2025-07-10 17:23 (+2d) |  |  |  |  |
| 21 | Написание руководства пользователя | 2025-07-03 15:20 → 2025-07-07 15:23 (+4d) | 2025-07-25 12:20 → 2025-07-29 12:23 (+4d) |  |  |  |  |
| 22 | **Создание web-сайта и поддержка** | 2025-07-03 15:20 → 2025-07-07 15:23 (+4d) | 2025-08-06 16:20 → 2025-08-08 16:23 (+2d) |  |  |  |  |
| 23 | Разработка структуры сайта | 2025-07-03 15:20 → 2025-07-07 15:23 (+4d) | 2025-07-04 15:20 → 2025-07-08 15:23 (+4d) |  |  |  |  |
| 24 | Разработка дизайна сайта | 2025-07-04 15:20 → 2025-07-08 15:23 (+4d) | 2025-07-16 09:20 → 2025-07-18 09:23 (+2d) |  |  |  |  |
| 25 | Наполнение сайта | 2025-07-16 09:20 → 2025-07-18 09:23 (+2d) | 2025-08-06 16:20 → 2025-08-08 16:23 (+2d) |  |  |  |  |
| 26 | Тестирование сайта | 2025-07-30 16:20 → 2025-08-01 16:23 (+2d) | 2025-08-18 12:22 → 2025-08-22 14:16 (+4d) | 2.53w → 3.27w |  |  | resources Программист#2; Программист#3; Программист#4 → Программист#1; Программист#2; Программист#3; Программист#4 |
| 27 | Сдача сайта в эксплуатацию | 2025-08-18 12:22 → 2025-08-22 14:16 (+4d) | 2025-08-18 12:22 → 2025-08-22 14:16 (+4d) |  |  |  |  |

## Version 9 (data date 2025-05-15, saved 2025-03-18, file task_5_new_fix_no_work_wrong.mpp)

Note of the change: Add 03, 04, tasks 05

Last finish 2025-08-22 → 2025-08-29 (+7d).

Changed:

| ID | Task | Start | Finish | Duration | Complete | Total float | Other |
| --- | --- | --- | --- | --- | --- | --- | --- |
| 2 | **Создание интерфейса** |  | 2025-07-17 15:23 → 2025-07-18 10:20 (+1d) | 92.3d → 92.79d | 83% → 80% |  |  |
| 7 | Программирование интерфейса | 2025-07-08 10:23 → 2025-07-04 10:20 (-4d) | 2025-07-17 15:23 → 2025-07-18 10:20 (+1d) | 1.68w → 2w |  |  | resources Программист#3; Программист#4; Программист#1; Программист#2 → Программист#3; Программист#4; Программист#2 |
| 8 | **Построение базы объектов** |  | 2025-08-08 18:00 → 2025-08-06 10:00 (-2d) | 91.75d → 88.88d |  | 9.53d → 17.74d |  |
| 10 | Программирование средств обработки базы объектов |  | 2025-05-14 17:00 → 2025-05-09 18:00 (-5d) |  |  | 9.53d → 17.74d |  |
| 11 | Наполнение базы объектов | 2025-05-14 17:00 → 2025-05-12 09:00 (-2d) | 2025-08-08 18:00 → 2025-08-06 10:00 (-2d) |  |  | 9.53d → 17.74d |  |
| 12 | **Создание ядра GIS** |  | 2025-07-08 10:23 → 2025-07-04 10:20 (-4d) | 84.8d → 82.79d | 49% → 51% |  |  |
| 15 | Тестирование модели ядра |  | 2025-05-22 15:00 → 2025-05-20 14:57 (-2d) | 1w → 0.52w |  |  | resources Программист#1 → Программист#2; Программист#3 |
| 16 | Создание рабочей версии ядра | 2025-05-22 15:00 → 2025-05-20 14:57 (-2d) | 2025-07-08 10:23 → 2025-07-04 10:20 (-4d) |  |  |  |  |
| 17 | Создание мультимедиа-наполнения |  | 2025-06-02 16:00 → 2025-05-20 15:24 (-13d) | 6w → 4.24w | 58% → 41% | 56.66d → 71.07d |  |
| 18 | Создание справочной системы | 2025-07-29 12:23 → 2025-07-30 09:00 (+1d) | 2025-08-12 17:23 → 2025-08-13 13:00 (+1d) |  |  | 7.61d → 12.37d |  |
| 19 | **Создание руководства пользователя** | 2025-07-03 15:23 → 2025-07-04 10:20 (+1d) | 2025-07-29 12:23 → 2025-07-29 17:20 |  |  |  |  |
| 20 | Разработка дизайна руководства | 2025-07-03 15:23 → 2025-07-04 10:20 (+1d) | 2025-07-10 17:23 → 2025-07-11 12:20 (+1d) |  |  |  |  |
| 21 | Написание руководства пользователя | 2025-07-07 15:23 → 2025-07-08 10:20 (+1d) | 2025-07-29 12:23 → 2025-07-29 17:20 |  |  |  |  |
| 22 | **Создание web-сайта и поддержка** | 2025-07-07 15:23 → 2025-07-08 10:20 (+1d) | 2025-08-08 16:23 → 2025-08-11 11:20 (+3d) |  |  |  |  |
| 23 | Разработка структуры сайта | 2025-07-07 15:23 → 2025-07-08 10:20 (+1d) | 2025-07-08 15:23 → 2025-07-09 10:20 (+1d) |  |  |  |  |
| 24 | Разработка дизайна сайта | 2025-07-08 15:23 → 2025-07-09 10:20 (+1d) | 2025-07-18 09:23 → 2025-07-18 14:20 |  |  |  |  |
| 25 | Наполнение сайта | 2025-07-18 09:23 → 2025-07-18 14:20 | 2025-08-08 16:23 → 2025-08-11 11:20 (+3d) |  |  |  |  |
| 26 | Тестирование сайта | 2025-08-01 16:23 → 2025-08-04 11:20 (+3d) | 2025-08-22 14:16 → 2025-08-29 16:57 (+7d) | 3.27w → 3.92w |  |  | resources Программист#1; Программист#2; Программист#3; Программист#4 → Программист#2; Программист#3; Программист#4 |
| 27 | Сдача сайта в эксплуатацию | 2025-08-22 14:16 → 2025-08-29 16:57 (+7d) | 2025-08-22 14:16 → 2025-08-29 16:57 (+7d) |  |  |  |  |

## Version 10 (data date 2025-05-15, saved 2025-03-18, file finish.mpp)

Note of the change: Add 03, 04, tasks 05

Last finish 2025-08-29 → 2025-08-22 (-7d).

Changed:

| ID | Task | Start | Finish | Duration | Complete | Total float | Other |
| --- | --- | --- | --- | --- | --- | --- | --- |
| 2 | **Создание интерфейса** |  | 2025-07-18 10:20 → 2025-07-17 15:23 (-1d) | 92.79d → 92.3d | 80% → 83% |  |  |
| 7 | Программирование интерфейса | 2025-07-04 10:20 → 2025-07-08 10:23 (+4d) | 2025-07-18 10:20 → 2025-07-17 15:23 (-1d) | 2w → 1.68w |  |  | resources Программист#3; Программист#4; Программист#2 → Программист#3; Программист#4; Программист#1; Программист#2 |
| 8 | **Построение базы объектов** |  | 2025-08-06 10:00 → 2025-08-08 18:00 (+2d) | 88.88d → 91.75d |  | 17.74d → 9.53d |  |
| 10 | Программирование средств обработки базы объектов |  | 2025-05-09 18:00 → 2025-05-14 17:00 (+5d) |  |  | 17.74d → 9.53d |  |
| 11 | Наполнение базы объектов | 2025-05-12 09:00 → 2025-05-14 17:00 (+2d) | 2025-08-06 10:00 → 2025-08-08 18:00 (+2d) |  |  | 17.74d → 9.53d |  |
| 12 | **Создание ядра GIS** |  | 2025-07-04 10:20 → 2025-07-08 10:23 (+4d) | 82.79d → 84.8d | 51% → 49% |  |  |
| 15 | Тестирование модели ядра |  | 2025-05-20 14:57 → 2025-05-22 15:00 (+2d) | 0.52w → 1w |  |  | resources Программист#2; Программист#3 → Программист#1 |
| 16 | Создание рабочей версии ядра | 2025-05-20 14:57 → 2025-05-22 15:00 (+2d) | 2025-07-04 10:20 → 2025-07-08 10:23 (+4d) |  |  |  |  |
| 18 | Создание справочной системы | 2025-07-30 09:00 → 2025-07-29 12:23 (-1d) | 2025-08-13 13:00 → 2025-08-12 17:23 (-1d) |  |  | 12.37d → 7.61d |  |
| 19 | **Создание руководства пользователя** | 2025-07-04 10:20 → 2025-07-03 15:23 (-1d) | 2025-07-29 17:20 → 2025-07-29 12:23 |  |  |  |  |
| 20 | Разработка дизайна руководства | 2025-07-04 10:20 → 2025-07-03 15:23 (-1d) | 2025-07-11 12:20 → 2025-07-10 17:23 (-1d) |  |  |  |  |
| 21 | Написание руководства пользователя | 2025-07-08 10:20 → 2025-07-07 15:23 (-1d) | 2025-07-29 17:20 → 2025-07-29 12:23 |  |  |  |  |
| 22 | **Создание web-сайта и поддержка** | 2025-07-08 10:20 → 2025-07-07 15:23 (-1d) | 2025-08-11 11:20 → 2025-08-08 16:23 (-3d) |  |  |  |  |
| 23 | Разработка структуры сайта | 2025-07-08 10:20 → 2025-07-07 15:23 (-1d) | 2025-07-09 10:20 → 2025-07-08 15:23 (-1d) |  |  |  |  |
| 24 | Разработка дизайна сайта | 2025-07-09 10:20 → 2025-07-08 15:23 (-1d) | 2025-07-18 14:20 → 2025-07-18 09:23 |  |  |  |  |
| 25 | Наполнение сайта | 2025-07-18 14:20 → 2025-07-18 09:23 | 2025-08-11 11:20 → 2025-08-08 16:23 (-3d) |  |  |  |  |
| 26 | Тестирование сайта | 2025-08-04 11:20 → 2025-08-01 16:23 (-3d) | 2025-08-29 16:57 → 2025-08-22 14:16 (-7d) | 3.92w → 3.27w |  |  | resources Программист#2; Программист#3; Программист#4 → Программист#1; Программист#2; Программист#3; Программист#4 |
| 27 | Сдача сайта в эксплуатацию | 2025-08-29 16:57 → 2025-08-22 14:16 (-7d) | 2025-08-29 16:57 → 2025-08-22 14:16 (-7d) |  |  |  |  |
