# Создание карты города

How a schedule from MS Project changed from version to version. A marks actual dates.

## Version 1 (saved 2025-02-26, file task_1.mpp)

Note of the change: добавить л/р 4, 5; добавить рк1

| ID | WBS | Task | Duration | Start | Finish | Predecessors | Total float |
| --- | --- | --- | --- | --- | --- | --- | --- |
| 1 |  | Начало проекта | 0w | 2025-03-03 | 2025-03-03 |  | 70d |
| 2 | 2 | **Создание интерфейса** | 110d | 2025-03-03 | 2025-08-12 | 1 | 0d |
| 3 | 2.1 | **Разработка дизайна интерфейса** | 25d | 2025-03-03 | 2025-04-07 |  | 70d |
| 4 |  | Разработка 2D графических элементов | 3w | 2025-03-03 | 2025-03-24 |  | 70d |
| 5 |  | Разработка 3D графических элементов | 2w | 2025-03-03 | 2025-03-17 | 4SS | 70d |
| 6 |  | Создание заставки | 3w | 2025-03-17 | 2025-04-07 | 5 | 70d |
| 7 |  | Программирование интерфейса | 3w | 2025-07-22 | 2025-08-12 | 3, 12 | 0d |
| 8 | 3 | **Построение базы объектов** | 85d | 2025-03-03 | 2025-07-08 |  | 53d |
| 9 |  | Анализ и построение структуры базы объектов | 2w | 2025-03-03 | 2025-03-17 |  | 53d |
| 10 |  | Программирование средств обработки базы объектов | 3w | 2025-03-17 | 2025-04-07 | 9 | 53d |
| 11 |  | Наполнение базы объектов | 12w | 2025-04-07 | 2025-07-08 | 10 | 53d |
| 12 | 4 | **Создание ядра GIS** | 95d | 2025-03-03 | 2025-07-22 |  | 0d |
| 13 |  | Анализ и проектирование ядра | 3w | 2025-03-03 | 2025-03-24 |  | 0d |
| 14 |  | Создание модели ядра | 5w | 2025-03-24 | 2025-04-28 | 13 | 0d |
| 15 |  | Тестирование модели ядра | 1w | 2025-04-28 | 2025-05-07 | 14 | 0d |
| 16 |  | Создание рабочей версии ядра | 10w | 2025-05-07 | 2025-07-22 | 15 | 0d |
| 17 |  | Создание мультимедиа-наполнения | 6w | 2025-04-07 | 2025-05-23 | 3 | 83d |
| 18 |  | Создание справочной системы | 2w | 2025-08-12 | 2025-08-26 | 7 | 18d |
| 19 | 7 | **Создание руководства пользователя** | 17d | 2025-07-29 | 2025-08-21 | 7FS-10d | 0d |
| 20 |  | Разработка дизайна руководства | 1w | 2025-07-29 | 2025-08-05 |  | 0d |
| 21 |  | Написание руководства пользователя | 3w | 2025-07-31 | 2025-08-21 | 20SS+2d | 0d |
| 22 | 8 | **Создание web-сайта и поддержка** | 21d | 2025-07-31 | 2025-08-29 |  | 0d |
| 23 |  | Разработка структуры сайта | 1d | 2025-07-31 | 2025-08-01 | 21SS | 0d |
| 24 |  | Разработка дизайна сайта | 1w | 2025-08-01 | 2025-08-08 | 23 | 0d |
| 25 |  | Наполнение сайта | 3w | 2025-08-08 | 2025-08-29 | 24 | 0d |
| 26 |  | Тестирование сайта | 4w | 2025-08-22 | 2025-09-19 | 22FS-1w | 0d |
| 27 |  | Сдача сайта в эксплуатацию | 0w | 2025-09-19 | 2025-09-19 | 26 | 0d |

## Version 2 (saved 2025-04-01, file task_3.mpp)

Note of the change: добавить л/р 4, 5; добавить рк1

Last finish 2025-09-19 → 2025-07-22 (-59d).

Added:

| ID | Task | Duration | Start | Finish |
| --- | --- | --- | --- | --- |
| 2 | **Анализ и проектирование** | 15d | 2025-03-03 | 2025-03-24 |
| 5 | **Создание** | 95d | 2025-03-03 | 2025-07-22 |
| 6 | **Разработка** | 40d | 2025-03-03 | 2025-04-28 |
| 15 | **Кодирование** | 85d | 2025-03-17 | 2025-07-22 |
| 19 | **Наполнение** | 79d | 2025-03-11 | 2025-07-08 |
| 23 | **Документирование** | 20d | 2025-04-14 | 2025-05-16 |
| 28 | **Тестирование** | 44d | 2025-03-04 | 2025-05-07 |

Removed: 2 Создание интерфейса; 8 Построение базы объектов; 12 Создание ядра GIS

Changed:

| ID | Task | Start | Finish | Duration | Total float | Predecessors | Other |
| --- | --- | --- | --- | --- | --- | --- | --- |
| 3 | Анализ и построение структуры базы объектов |  |  |  | 53d → 10d |  | resources none → Системный аналитик |
| 4 | Анализ и проектирование ядра |  |  |  |  |  | resources none → Системный аналитик; Ведущий программист |
| 8 | Разработка 2D графических элементов |  |  |  | 70d → 40d |  | resources none → Художник-дизайнер |
| 9 | Разработка 3D графических элементов |  |  |  | 70d → 40d |  | resources none → 3D аниматор |
| 10 | Создание заставки |  |  |  | 70d → 40d |  | resources none → 3D аниматор |
| 11 | Создание модели ядра |  |  |  |  |  | resources none → Ведущий программист; Программист#1 |
| 12 | **Создание web-сайта и поддержка** | 2025-07-31 → 2025-03-03 (-150d) | 2025-08-29 → 2025-03-11 (-171d) | 21d → 6d | 0d → 74d |  |  |
| 13 | Разработка структуры сайта | 2025-07-31 → 2025-03-03 (-150d) | 2025-08-01 → 2025-03-03 (-151d) |  | 0d → 74d | 27SS → none | resources none → Web-дизайнер |
| 14 | Разработка дизайна сайта | 2025-08-01 → 2025-03-04 (-150d) | 2025-08-08 → 2025-03-11 (-150d) |  | 0d → 74d |  | resources none → Web-дизайнер; 3D аниматор; Художник-дизайнер |
| 16 | Создание рабочей версии ядра |  |  |  |  |  | resources none → Ведущий программист; Программист#1; Программист#2 |
| 17 | Программирование средств обработки базы объектов |  |  |  | 53d → 10d |  | resources none → Программист#3; Программист#4 |
| 18 | Программирование интерфейса | 2025-07-22 → 2025-04-07 (-106d) | 2025-08-12 → 2025-04-28 (-106d) |  | 0d → 45d | 7, Создание ядра GIS → 7 | resources none → Программист#3; Программист#4 |
| 20 | Наполнение сайта | 2025-08-08 → 2025-03-11 (-150d) | 2025-08-29 → 2025-04-01 (-150d) |  | 0d → 74d |  | resources none → Web-дизайнер |
| 21 | Создание мультимедиа-наполнения |  |  |  | 83d → 40d |  | resources none → Мультимедиа-корреспондент |
| 22 | Наполнение базы объектов |  |  |  | 53d → 10d |  | resources none → Наборщик данных#1; Наборщик данных#2; Наборщик данных#3; Наборщик данных#4; Наборщик данных#5 |
| 24 | Создание справочной системы | 2025-08-12 → 2025-04-28 (-106d) | 2025-08-26 → 2025-05-16 (-102d) |  | 18d → 45d |  | resources none → Технический писатель |
| 25 | **Создание руководства пользователя** | 2025-07-29 → 2025-04-14 (-106d) | 2025-08-21 → 2025-05-13 (-100d) |  | 0d → 48d |  |  |
| 26 | Разработка дизайна руководства | 2025-07-29 → 2025-04-14 (-106d) | 2025-08-05 → 2025-04-21 (-106d) |  | 0d → 48d |  | resources none → Художник-дизайнер |
| 27 | Написание руководства пользователя | 2025-07-31 → 2025-04-16 (-106d) | 2025-08-21 → 2025-05-13 (-100d) |  | 0d → 48d |  | resources none → Технический писатель |
| 29 | Тестирование сайта | 2025-08-22 → 2025-03-04 (-171d) | 2025-09-19 → 2025-04-01 (-171d) |  | 0d → 74d |  | resources none → Ведущий программист; Программист#1; Программист#2 |
| 30 | Тестирование модели ядра |  |  |  |  |  | resources none → Программист#1 |
| 31 | Сдача сайта в эксплуатацию | 2025-09-19 → 2025-07-22 (-59d) | 2025-09-19 → 2025-07-22 (-59d) |  |  | 29 → 2, 5, 23, 28 |  |

## Version 3 (data date 2025-05-15, saved 2025-04-01, file task.mpp)

Note of the change: добавить л/р 4, 5; добавить рк1

Last finish 2025-07-22 → 2025-08-22 (+31d). Complete tasks 0 → 17.

Added:

| ID | Task | Duration | Start | Finish | Predecessors | Constraint | Resources |
| --- | --- | --- | --- | --- | --- | --- | --- |
| 2 | **Создание интерфейса** | 92.3d | 2025-03-03 09:00 A | 2025-07-17 15:23 | 1 |  |  |
| 8 | **Построение базы объектов** | 91.75d | 2025-03-26 09:00 A | 2025-08-08 18:00 |  |  | Аренда сервера; Собственный сервер |
| 12 | **Создание ядра GIS** | 84.8d | 2025-03-03 09:00 A | 2025-07-08 10:23 |  |  |  |
| 28 | **Совещание** | 108.75d | 2025-03-05 10:00 A | 2025-08-13 11:00 |  |  |  |
| 29 | Совещание 1 | 1h | 2025-03-05 10:00 A | 2025-03-05 11:00 A |  | start no earlier than 2025-03-05 10:00 | 3D аниматор; Web-дизайнер; Ведущий программист; Мультимедиа-корреспондент; Системный аналитик; Технический писатель; Художник-дизайнер |
| 30 | Совещание 2 | 1h | 2025-03-12 10:00 A | 2025-03-12 11:00 |  | start no earlier than 2025-03-12 10:00 | 3D аниматор; Web-дизайнер; Ведущий программист; Мультимедиа-корреспондент; Системный аналитик; Технический писатель; Художник-дизайнер |
| 31 | Совещание 3 | 1h | 2025-03-19 10:00 A | 2025-03-19 11:00 A |  | start no earlier than 2025-03-19 10:00 | 3D аниматор; Web-дизайнер; Ведущий программист; Мультимедиа-корреспондент; Системный аналитик; Технический писатель; Художник-дизайнер |
| 32 | Совещание 4 | 1h | 2025-03-26 10:00 A | 2025-03-26 11:00 A |  | start no earlier than 2025-03-26 10:00 | 3D аниматор; Web-дизайнер; Ведущий программист; Мультимедиа-корреспондент; Системный аналитик; Технический писатель; Художник-дизайнер |
| 33 | Совещание 5 | 1h | 2025-04-02 10:00 A | 2025-04-02 11:00 A |  | start no earlier than 2025-04-02 10:00 | 3D аниматор; Web-дизайнер; Ведущий программист; Мультимедиа-корреспондент; Системный аналитик; Технический писатель; Художник-дизайнер |
| 34 | Совещание 6 | 1h | 2025-04-09 10:00 A | 2025-04-09 11:00 A |  | start no earlier than 2025-04-09 10:00 | 3D аниматор; Web-дизайнер; Ведущий программист [80%]; Мультимедиа-корреспондент; Системный аналитик; Технический писатель; Художник-дизайнер |
| 35 | Совещание 7 | 1h | 2025-04-16 10:00 A | 2025-04-16 11:00 A |  | start no earlier than 2025-04-16 10:00 | 3D аниматор; Web-дизайнер; Ведущий программист [80%]; Мультимедиа-корреспондент; Системный аналитик; Технический писатель; Художник-дизайнер |
| 36 | Совещание 8 | 1h | 2025-04-23 10:00 A | 2025-04-23 11:00 A |  | start no earlier than 2025-04-23 10:00 | 3D аниматор; Web-дизайнер; Мультимедиа-корреспондент; Системный аналитик; Технический писатель; Художник-дизайнер; Программист#1 |
| 37 | Совещание 9 | 1h | 2025-04-30 10:00 A | 2025-04-30 11:00 A |  | start no earlier than 2025-04-30 10:00 | 3D аниматор; Web-дизайнер; Мультимедиа-корреспондент; Системный аналитик; Технический писатель; Художник-дизайнер; Программист#1 |
| 38 | Совещание 10 | 1h | 2025-05-07 10:00 A | 2025-05-07 11:00 A |  | start no earlier than 2025-05-07 10:00 | 3D аниматор; Web-дизайнер; Мультимедиа-корреспондент; Системный аналитик; Технический писатель; Художник-дизайнер; Программист#1 |
| 39 | Совещание 11 | 1h | 2025-05-14 10:00 A | 2025-05-14 11:00 A |  | start no earlier than 2025-05-14 10:00 | 3D аниматор; Web-дизайнер; Мультимедиа-корреспондент; Системный аналитик; Технический писатель; Художник-дизайнер; Программист#1 |
| 40 | Совещание 12 | 1h | 2025-05-21 10:00 | 2025-05-21 11:00 |  | start no earlier than 2025-05-21 10:00 | 3D аниматор; Web-дизайнер; Мультимедиа-корреспондент; Системный аналитик; Технический писатель; Художник-дизайнер; Программист#1 |
| 41 | Совещание 13 | 1h | 2025-05-28 10:00 | 2025-05-28 11:00 |  | start no earlier than 2025-05-28 10:00 | 3D аниматор; Web-дизайнер; Мультимедиа-корреспондент; Системный аналитик; Технический писатель; Художник-дизайнер; Программист#1 |
| 42 | Совещание 14 | 1h | 2025-06-04 10:00 | 2025-06-04 11:00 |  | start no earlier than 2025-06-04 10:00 | 3D аниматор; Web-дизайнер; Мультимедиа-корреспондент; Системный аналитик; Технический писатель; Художник-дизайнер; Программист#1 |
| 43 | Совещание 15 | 1h | 2025-06-11 10:00 | 2025-06-11 11:00 |  | start no earlier than 2025-06-11 10:00 | 3D аниматор; Web-дизайнер; Мультимедиа-корреспондент; Системный аналитик; Технический писатель; Художник-дизайнер; Программист#1 |
| 44 | Совещание 16 | 1h | 2025-06-18 10:00 | 2025-06-18 11:00 |  | start no earlier than 2025-06-18 10:00 | 3D аниматор; Web-дизайнер; Мультимедиа-корреспондент; Системный аналитик; Технический писатель; Художник-дизайнер; Программист#1 |
| 45 | Совещание 17 | 1h | 2025-06-25 10:00 | 2025-06-25 11:00 |  | start no earlier than 2025-06-25 10:00 | 3D аниматор; Web-дизайнер; Мультимедиа-корреспондент; Системный аналитик; Технический писатель; Художник-дизайнер; Программист#1 |
| 46 | Совещание 18 | 1h | 2025-07-02 10:00 | 2025-07-02 11:00 |  | start no earlier than 2025-07-02 10:00 | 3D аниматор; Web-дизайнер; Мультимедиа-корреспондент; Системный аналитик; Технический писатель; Художник-дизайнер; Программист#1 |
| 47 | Совещание 19 | 1h | 2025-07-09 10:00 | 2025-07-09 11:00 |  | start no earlier than 2025-07-09 10:00 | 3D аниматор; Web-дизайнер; Мультимедиа-корреспондент; Системный аналитик; Технический писатель; Художник-дизайнер; Программист#1 |
| 48 | Совещание 20 | 1h | 2025-07-16 10:00 | 2025-07-16 11:00 |  | start no earlier than 2025-07-16 10:00 | 3D аниматор; Web-дизайнер; Мультимедиа-корреспондент; Системный аналитик; Технический писатель; Художник-дизайнер; Программист#1 |
| 49 | Совещание 21 | 1h | 2025-07-23 10:00 | 2025-07-23 11:00 |  | start no earlier than 2025-07-23 10:00 | 3D аниматор; Web-дизайнер; Мультимедиа-корреспондент; Системный аналитик; Технический писатель; Художник-дизайнер; Программист#1 |
| 50 | Совещание 22 | 1h | 2025-07-30 10:00 | 2025-07-30 11:00 |  | start no earlier than 2025-07-30 10:00 | 3D аниматор; Web-дизайнер; Мультимедиа-корреспондент; Системный аналитик; Технический писатель; Художник-дизайнер; Программист#1 |
| 51 | Совещание 23 | 1h | 2025-08-06 10:00 | 2025-08-06 11:00 |  | start no earlier than 2025-08-06 10:00 | 3D аниматор; Web-дизайнер; Мультимедиа-корреспондент; Системный аналитик; Технический писатель; Художник-дизайнер; Программист#1 |
| 52 | Совещание 24 | 1h | 2025-08-13 10:00 | 2025-08-13 11:00 |  | start no earlier than 2025-08-13 10:00 | 3D аниматор; Web-дизайнер; Мультимедиа-корреспондент; Системный аналитик; Технический писатель; Художник-дизайнер; Программист#1 |

Removed: 2 Анализ и проектирование; 5 Создание; 6 Разработка; 15 Кодирование; 19 Наполнение; 23 Документирование; 28 Тестирование

Changed:

| ID | Task | Start | Finish | Duration | Complete | Total float | Predecessors | Other |
| --- | --- | --- | --- | --- | --- | --- | --- | --- |
| 1 | Начало проекта | 2025-03-03 → 2025-03-03 09:00 A | 2025-03-03 → 2025-03-03 09:00 A |  | 0% → 100% | 95d → none |  | baseline start none → 2025-03-03 09:00; baseline finish none → 2025-03-03 09:00 |
| 3 | **Разработка дизайна интерфейса** | 2025-03-03 → 2025-03-03 09:00 A | 2025-04-07 → 2025-04-14 16:00 A (+7d) | 25d → 30.62d | 0% → 100% | 40d → none |  | baseline start none → 2025-03-03 09:00; baseline finish none → 2025-04-07 16:00 |
| 4 | Разработка 2D графических элементов | 2025-03-03 → 2025-03-03 09:00 A | 2025-03-24 → 2025-03-24 13:00 A |  | 0% → 100% | 40d → none |  | baseline start none → 2025-03-03 09:00; baseline finish none → 2025-03-24 13:00 |
| 5 | Разработка 3D графических элементов | 2025-03-03 → 2025-03-03 09:00 A | 2025-03-17 → 2025-03-24 12:00 A (+7d) |  | 0% → 100% | 40d → none |  | baseline start none → 2025-03-03 09:00; baseline finish none → 2025-03-17 12:00 |
| 6 | Создание заставки | 2025-03-17 → 2025-03-24 12:00 A (+7d) | 2025-04-07 → 2025-04-14 16:00 A (+7d) |  | 0% → 100% | 40d → none |  | baseline start none → 2025-03-17 12:00; baseline finish none → 2025-04-07 16:00 |
| 7 | Программирование интерфейса | 2025-04-07 → 2025-07-08 10:23 (+92d) | 2025-04-28 → 2025-07-17 15:23 (+80d) | 3w → 1.68w |  | 45d → 0d | 3 → 3, 12 | resources Программист#3; Программист#4 → Программист#3; Программист#4; Программист#1; Программист#2; baseline start none → 2025-07-04 16:48; baseline finish none → 2025-07-16 11:48 |
| 9 | Анализ и построение структуры базы объектов | 2025-03-03 → 2025-03-26 09:00 A (+23d) | 2025-03-17 → 2025-04-14 16:00 A (+28d) |  | 0% → 100% | 10d → none |  | baseline start none → 2025-03-24 14:00; baseline finish none → 2025-04-07 16:00 |
| 10 | Программирование средств обработки базы объектов | 2025-03-17 → 2025-04-09 12:00 A (+23d) | 2025-04-07 → 2025-05-14 17:00 (+37d) |  | 0% → 80% | 10d → 9.53d |  | resources Программист#3; Программист#4 → Программист#3; Программист#4; Программист#1; Программист#2; baseline start none → 2025-04-07 16:00; baseline finish none → 2025-05-14 10:00 |
| 11 | Наполнение базы объектов | 2025-04-07 → 2025-05-14 17:00 (+37d) | 2025-07-08 → 2025-08-08 18:00 (+31d) |  |  | 10d → 9.53d |  | baseline start none → 2025-05-14 10:00; baseline finish none → 2025-08-08 11:00 |
| 13 | Анализ и проектирование ядра | 2025-03-03 → 2025-03-03 09:00 A | 2025-03-24 → 2025-03-31 13:00 A (+7d) |  | 0% → 100% | 0d → none |  | baseline start none → 2025-03-03 09:00; baseline finish none → 2025-03-24 13:00 |
| 14 | Создание модели ядра | 2025-03-24 → 2025-03-31 14:00 A (+7d) | 2025-04-28 → 2025-05-13 10:00 A (+15d) |  | 0% → 100% | 0d → none |  | resources Ведущий программист; Программист#1 → Ведущий программист [80%]; Программист#1; baseline start none → 2025-03-24 14:00; baseline finish none → 2025-04-29 10:00 |
| 15 | Тестирование модели ядра | 2025-04-28 → 2025-05-16 09:00 (+18d) | 2025-05-07 → 2025-05-22 15:00 (+15d) |  |  |  |  | baseline start none → 2025-05-14 10:00; baseline finish none → 2025-05-21 10:00 |
| 16 | Создание рабочей версии ядра | 2025-05-07 → 2025-05-22 15:00 (+15d) | 2025-07-22 → 2025-07-08 10:23 (-14d) | 10w → 7.21w |  |  |  | resources Ведущий программист; Программист#1; Программист#2 → Программист#1; Программист#2; Программист#3; Программист#4; baseline start none → 2025-05-21 10:00; baseline finish none → 2025-07-04 16:48 |
| 17 | Создание мультимедиа-наполнения | 2025-04-07 → 2025-04-14 16:00 A (+7d) | 2025-05-23 → 2025-05-20 15:24 (-3d) | 6w → 4.24w | 0% → 41% | 40d → 65.73d |  | resources Мультимедиа-корреспондент → Мультимедиа-корреспондент; Специализированное ПО; baseline start none → 2025-04-07 16:00; baseline finish none → 2025-05-26 16:00 |
| 18 | Создание справочной системы | 2025-04-28 → 2025-07-29 12:23 (+92d) | 2025-05-16 → 2025-08-12 17:23 (+88d) |  |  | 45d → 7.61d |  | baseline start none → 2025-07-25 15:48; baseline finish none → 2025-08-08 17:48 |
| 19 | **Создание руководства пользователя** | 2025-04-14 → 2025-07-03 15:23 (+80d) | 2025-05-13 → 2025-07-29 12:23 (+77d) | 17d → 17.75d |  | 48d → 0d |  | baseline start none → 2025-07-02 11:48; baseline finish none → 2025-07-25 15:48 |
| 20 | Разработка дизайна руководства | 2025-04-14 → 2025-07-03 15:23 (+80d) | 2025-04-21 → 2025-07-10 17:23 (+80d) |  |  | 48d → 0d |  | baseline start none → 2025-07-02 11:48; baseline finish none → 2025-07-09 12:48 |
| 21 | Написание руководства пользователя | 2025-04-16 → 2025-07-07 15:23 (+82d) | 2025-05-13 → 2025-07-29 12:23 (+77d) |  |  | 48d → 0d |  | baseline start none → 2025-07-04 11:48; baseline finish none → 2025-07-25 15:48 |
| 22 | **Создание web-сайта и поддержка** | 2025-03-03 → 2025-07-07 15:23 (+126d) | 2025-03-11 → 2025-08-08 16:23 (+150d) | 6d → 24.12d |  | 74d → 0d |  | baseline start none → 2025-07-04 11:48; baseline finish none → 2025-08-06 17:48 |
| 23 | Разработка структуры сайта | 2025-03-03 → 2025-07-07 15:23 (+126d) | 2025-03-03 → 2025-07-08 15:23 (+127d) |  |  | 74d → 0d | none → 21SS | baseline start none → 2025-07-04 11:48; baseline finish none → 2025-07-07 11:48 |
| 24 | Разработка дизайна сайта | 2025-03-04 → 2025-07-08 15:23 (+126d) | 2025-03-11 → 2025-07-18 09:23 (+129d) | 1w → 1.38w |  | 74d → 0d |  | baseline start none → 2025-07-07 11:48; baseline finish none → 2025-07-16 14:48 |
| 25 | Наполнение сайта | 2025-03-11 → 2025-07-18 09:23 (+129d) | 2025-04-01 → 2025-08-08 16:23 (+129d) |  |  | 74d → 0d |  | baseline start none → 2025-07-16 14:48; baseline finish none → 2025-08-06 17:48 |
| 26 | Тестирование сайта | 2025-03-04 → 2025-08-01 16:23 (+150d) | 2025-04-01 → 2025-08-22 14:16 (+143d) | 4w → 3.27w |  | 74d → 0d |  | resources Ведущий программист; Программист#1; Программист#2 → Программист#1; Программист#2; Программист#3; Программист#4; baseline start none → 2025-07-30 17:48; baseline finish none → 2025-08-18 10:22 |
| 27 | Сдача сайта в эксплуатацию | 2025-07-22 → 2025-08-22 14:16 (+31d) | 2025-07-22 → 2025-08-22 14:16 (+31d) |  |  |  | Анализ и проектирование, Создание, Документирование, Тестирование → 26 | baseline start none → 2025-08-18 10:22; baseline finish none → 2025-08-18 10:22 |
