# Создание Интернет-компании

How a schedule from MS Project changed from version to version. A marks actual dates.

## Version 1 (saved 2025-03-25, file 2.mpp)

Note of the change: добавить л/р 4, 5; добавить рк1

| ID | Task | Duration | Start | Finish | Total float |
| --- | --- | --- | --- | --- | --- |
| 1 | Начало проекта | 0d | 2025-04-07 | 2025-04-07 | 20d |
| 2 | Установка ПО | 15d | 2025-04-07 | 2025-04-25 | 5d |
| 3 | Обучение персонала | 20d | 2025-04-07 | 2025-05-06 | 0d |
| 4 | Разработка представительских сайтов | 1d | 2025-04-07 | 2025-04-07 | 19d |
| 5 | Разработка сайта 1 | 5d | 2025-04-07 | 2025-04-11 | 15d |
| 6 | Разработка сайта 2 | 5d | 2025-04-07 | 2025-04-11 | 15d |
| 7 | Представительские сайты создани | 0d | 2025-04-07 | 2025-04-07 | 20d |
| 8 | Разработка корпоративного сайта | 1d | 2025-04-07 | 2025-04-07 | 19d |
| 9 | Проектирование сайта | 5d | 2025-04-07 | 2025-04-11 | 15d |
| 10 | Программирование сайта | 15d | 2025-04-07 | 2025-04-25 | 5d |
| 11 | Наполнение сайта | 3d | 2025-04-07 | 2025-04-09 | 17d |
| 12 | Тестирование сайта | 5d | 2025-04-07 | 2025-04-11 | 15d |
| 13 | Сдача сайта заказчику | 0d | 2025-04-07 | 2025-04-07 | 20d |

## Version 2 (saved 2025-03-25, file 3.mpp)

Note of the change: добавить л/р 4, 5; добавить рк1

Last finish stays 2025-05-06.

Changed:

| ID | Task | Finish | Duration | Total float |
| --- | --- | --- | --- | --- |
| 4 | **Разработка представительских сайтов** | 2025-04-07 → 2025-04-11 (+4d) | 1d → 5d | 19d → 15d |
| 8 | **Разработка корпоративного сайта** | 2025-04-07 → 2025-04-25 (+18d) | 1d → 15d | 19d → 5d |

## Version 3 (saved 2025-03-25, file 4.mpp)

Note of the change: добавить л/р 4, 5; добавить рк1

Last finish 2025-05-06 → 2025-07-01 (+56d).

Changed:

| ID | Task | Start | Finish | Duration | Total float | Predecessors |
| --- | --- | --- | --- | --- | --- | --- |
| 2 | Установка ПО | 2025-04-07 → 2025-04-08 (+1d) | 2025-04-25 → 2025-04-28 (+3d) |  | 5d → 0d | none → 1FS+1d |
| 3 | Обучение персонала | 2025-04-07 → 2025-04-22 (+15d) | 2025-05-06 → 2025-05-23 (+17d) |  |  | none → 2SS+10d |
| 4 | **Разработка представительских сайтов** | 2025-04-07 → 2025-05-26 (+49d) | 2025-04-11 → 2025-06-04 (+54d) | 5d → 8d | 15d → 17d | none → 3 |
| 5 | Разработка сайта 1 | 2025-04-07 → 2025-05-26 (+49d) | 2025-04-11 → 2025-05-30 (+49d) |  | 15d → 17d |  |
| 6 | Разработка сайта 2 | 2025-04-07 → 2025-05-29 (+52d) | 2025-04-11 → 2025-06-04 (+54d) |  | 15d → 17d | none → 5FS-2d |
| 7 | Представительские сайты создани | 2025-04-07 → 2025-06-04 (+58d) | 2025-04-07 → 2025-06-04 (+58d) |  | 20d → 17d | none → 4 |
| 8 | **Разработка корпоративного сайта** | 2025-04-07 → 2025-05-26 (+49d) | 2025-04-25 → 2025-07-01 (+67d) | 15d → 25d | 5d → 0d | none → 3 |
| 9 | Проектирование сайта | 2025-04-07 → 2025-05-26 (+49d) | 2025-04-11 → 2025-05-30 (+49d) |  | 15d → 0d |  |
| 10 | Программирование сайта | 2025-04-07 → 2025-06-02 (+56d) | 2025-04-25 → 2025-06-24 (+60d) |  | 5d → 0d | none → 9 |
| 11 | Наполнение сайта | 2025-04-07 → 2025-06-20 (+74d) | 2025-04-09 → 2025-06-24 (+76d) |  | 17d → 0d | none → 10FS-3d |
| 12 | Тестирование сайта | 2025-04-07 → 2025-06-25 (+79d) | 2025-04-11 → 2025-07-01 (+81d) |  | 15d → 0d | none → 11 |
| 13 | Сдача сайта заказчику | 2025-04-07 → 2025-07-01 (+85d) | 2025-04-07 → 2025-07-01 (+85d) |  | 20d → 0d | none → 12 |

## Version 4 (saved 2025-03-25, file 6.mpp)

Note of the change: добавить л/р 4, 5; добавить рк1

Last finish stays 2025-07-01.

Changed:

| ID | Task | Other |
| --- | --- | --- |
| 2 | Установка ПО | resources none → Программное обеспечение; Соколов |
| 3 | Обучение персонала | resources none → Преподаватели [400%]; Бумага [0.02 пач]; Картриджи для принтера; Петров; Тимофеев; Соломин; Яковлева; Кущнецов |
| 5 | Разработка сайта 1 | resources none → Кущнецов; Тимофеев |
| 6 | Разработка сайта 2 | resources none → Кущнецов; Тимофеев |
| 9 | Проектирование сайта | resources none → Соколов; Петров |
| 10 | Программирование сайта | resources none → Соломин; Яковлева |
| 11 | Наполнение сайта | resources none → Фомина |
| 12 | Тестирование сайта | resources none → Соломин; Яковлева |

## Version 5 (saved 2025-03-25, file 8.mpp)

Note of the change: добавить л/р 4, 5; добавить рк1

Last finish stays 2025-07-01.

Added:

| ID | Task | Duration | Start | Finish | Predecessors | Resources |
| --- | --- | --- | --- | --- | --- | --- |
| 6 | Разработка дизайна сайта 1 | 2d | 2025-05-26 | 2025-05-27 |  | Кущнецов |
| 7 | Программирование сайта 1 | 3d | 2025-05-28 | 2025-05-30 | 6 | Тимофеев |
| 9 | Разработка дизайна сайта 2 | 2d | 2025-05-29 | 2025-05-30 |  | Кущнецов |
| 10 | Программирование сайта 2 | 3d | 2025-06-02 | 2025-06-04 | 9 | Тимофеев |

Changed:

| ID | Task | Other |
| --- | --- | --- |
| 3 | Обучение персонала | resources Преподаватели [400%]; Бумага [0.02 пач]; Картриджи для принтера; Петров; Тимофеев; Соломин; Яковлева; Кущнецов → Преподаватели [300%]; Бумага [0.02 пач]; Картриджи для принтера; Петров; Тимофеев; Соломин; Яковлева; Кущнецов; Соколов |
| 5 | **Разработка сайта 1** | resources Кущнецов; Тимофеев → none |
| 8 | **Разработка сайта 2** | resources Кущнецов; Тимофеев → none |

## Version 6 (saved 2025-03-25, file 8_different_profiles.mpp)

Note of the change: добавить л/р 4, 5; добавить рк1

Last finish 2025-07-01 → 2025-07-28 (+27d).

Changed:

| ID | Task | Start | Finish | Duration |
| --- | --- | --- | --- | --- |
| 2 | Установка ПО |  | 2025-04-28 → 2025-05-16 (+18d) | 15d → 25d |
| 3 | Обучение персонала |  | 2025-05-23 → 2025-06-23 (+31d) | 20d → 38.33d |
| 4 | **Разработка представительских сайтов** | 2025-05-26 → 2025-06-23 (+28d) | 2025-06-04 → 2025-07-03 (+29d) |  |
| 5 | **Разработка сайта 1** | 2025-05-26 → 2025-06-23 (+28d) | 2025-05-30 → 2025-06-30 (+31d) |  |
| 6 | Разработка дизайна сайта 1 | 2025-05-26 → 2025-06-23 (+28d) | 2025-05-27 → 2025-06-25 (+29d) |  |
| 7 | Программирование сайта 1 | 2025-05-28 → 2025-06-25 (+28d) | 2025-05-30 → 2025-06-30 (+31d) |  |
| 8 | **Разработка сайта 2** | 2025-05-29 → 2025-06-26 (+28d) | 2025-06-04 → 2025-07-03 (+29d) |  |
| 9 | Разработка дизайна сайта 2 | 2025-05-29 → 2025-06-26 (+28d) | 2025-05-30 → 2025-06-30 (+31d) |  |
| 10 | Программирование сайта 2 | 2025-06-02 → 2025-06-30 (+28d) | 2025-06-04 → 2025-07-03 (+29d) |  |
| 11 | Представительские сайты создани | 2025-06-04 → 2025-07-03 (+29d) | 2025-06-04 → 2025-07-03 (+29d) |  |
| 12 | **Разработка корпоративного сайта** | 2025-05-26 → 2025-06-23 (+28d) | 2025-07-01 → 2025-07-28 (+27d) |  |
| 13 | Проектирование сайта | 2025-05-26 → 2025-06-23 (+28d) | 2025-05-30 → 2025-06-30 (+31d) |  |
| 14 | Программирование сайта | 2025-06-02 → 2025-06-30 (+28d) | 2025-06-24 → 2025-07-21 (+27d) |  |
| 15 | Наполнение сайта | 2025-06-20 → 2025-07-16 (+26d) | 2025-06-24 → 2025-07-21 (+27d) |  |
| 16 | Тестирование сайта | 2025-06-25 → 2025-07-21 (+26d) | 2025-07-01 → 2025-07-28 (+27d) |  |
| 17 | Сдача сайта заказчику | 2025-07-01 → 2025-07-28 (+27d) | 2025-07-01 → 2025-07-28 (+27d) |  |

## Version 7 (saved 2025-03-25, file 8_autofix.mpp)

Note of the change: добавить л/р 4, 5; добавить рк1

Last finish 2025-07-28 → 2025-07-08 (-20d).

Changed:

| ID | Task | Start | Finish | Duration |
| --- | --- | --- | --- | --- |
| 2 | Установка ПО |  | 2025-05-16 → 2025-04-28 (-18d) | 25d → 15d |
| 3 | Обучение персонала |  | 2025-06-23 → 2025-05-30 (-24d) | 38.33d → 25d |
| 4 | **Разработка представительских сайтов** | 2025-06-23 → 2025-06-02 (-21d) | 2025-07-03 → 2025-06-11 (-22d) |  |
| 5 | **Разработка сайта 1** | 2025-06-23 → 2025-06-02 (-21d) | 2025-06-30 → 2025-06-06 (-24d) |  |
| 6 | Разработка дизайна сайта 1 | 2025-06-23 → 2025-06-02 (-21d) | 2025-06-25 → 2025-06-03 (-22d) |  |
| 7 | Программирование сайта 1 | 2025-06-25 → 2025-06-04 (-21d) | 2025-06-30 → 2025-06-06 (-24d) |  |
| 8 | **Разработка сайта 2** | 2025-06-26 → 2025-06-05 (-21d) | 2025-07-03 → 2025-06-11 (-22d) |  |
| 9 | Разработка дизайна сайта 2 | 2025-06-26 → 2025-06-05 (-21d) | 2025-06-30 → 2025-06-06 (-24d) |  |
| 10 | Программирование сайта 2 | 2025-06-30 → 2025-06-09 (-21d) | 2025-07-03 → 2025-06-11 (-22d) |  |
| 11 | Представительские сайты создани | 2025-07-03 → 2025-06-11 (-22d) | 2025-07-03 → 2025-06-11 (-22d) |  |
| 12 | **Разработка корпоративного сайта** | 2025-06-23 → 2025-06-02 (-21d) | 2025-07-28 → 2025-07-08 (-20d) |  |
| 13 | Проектирование сайта | 2025-06-23 → 2025-06-02 (-21d) | 2025-06-30 → 2025-06-06 (-24d) |  |
| 14 | Программирование сайта | 2025-06-30 → 2025-06-09 (-21d) | 2025-07-21 → 2025-07-01 (-20d) |  |
| 15 | Наполнение сайта | 2025-07-16 → 2025-06-27 (-19d) | 2025-07-21 → 2025-07-01 (-20d) |  |
| 16 | Тестирование сайта | 2025-07-21 → 2025-07-02 (-19d) | 2025-07-28 → 2025-07-08 (-20d) |  |
| 17 | Сдача сайта заказчику | 2025-07-28 → 2025-07-08 (-20d) | 2025-07-28 → 2025-07-08 (-20d) |  |

## Version 8 (saved 2025-03-25, file 7.mpp)

Note of the change: добавить л/р 4, 5; добавить рк1

Last finish 2025-07-08 → 2025-07-01 (-7d).

Changed:

| ID | Task | Start | Finish | Duration | Other |
| --- | --- | --- | --- | --- | --- |
| 3 | Обучение персонала |  | 2025-05-30 → 2025-05-23 (-7d) | 25d → 20d | resources Преподаватели [300%]; Бумага [0.02 пач]; Картриджи для принтера; Петров; Тимофеев; Соломин; Яковлева; Кущнецов; Соколов → Преподаватели [400%]; Бумага [0.02 пач]; Картриджи для принтера; Петров; Тимофеев; Соломин; Яковлева; Кущнецов |
| 4 | **Разработка представительских сайтов** | 2025-06-02 → 2025-05-26 (-7d) | 2025-06-11 → 2025-06-04 (-7d) |  |  |
| 5 | **Разработка сайта 1** | 2025-06-02 → 2025-05-26 (-7d) | 2025-06-06 → 2025-05-30 (-7d) |  |  |
| 6 | Разработка дизайна сайта 1 | 2025-06-02 → 2025-05-26 (-7d) | 2025-06-03 → 2025-05-27 (-7d) |  |  |
| 7 | Программирование сайта 1 | 2025-06-04 → 2025-05-28 (-7d) | 2025-06-06 → 2025-05-30 (-7d) |  |  |
| 8 | **Разработка сайта 2** | 2025-06-05 → 2025-05-29 (-7d) | 2025-06-11 → 2025-06-04 (-7d) |  |  |
| 9 | Разработка дизайна сайта 2 | 2025-06-05 → 2025-05-29 (-7d) | 2025-06-06 → 2025-05-30 (-7d) |  |  |
| 10 | Программирование сайта 2 | 2025-06-09 → 2025-06-02 (-7d) | 2025-06-11 → 2025-06-04 (-7d) |  |  |
| 11 | Представительские сайты создани | 2025-06-11 → 2025-06-04 (-7d) | 2025-06-11 → 2025-06-04 (-7d) |  |  |
| 12 | **Разработка корпоративного сайта** | 2025-06-02 → 2025-05-26 (-7d) | 2025-07-08 → 2025-07-01 (-7d) |  |  |
| 13 | Проектирование сайта | 2025-06-02 → 2025-05-26 (-7d) | 2025-06-06 → 2025-05-30 (-7d) |  |  |
| 14 | Программирование сайта | 2025-06-09 → 2025-06-02 (-7d) | 2025-07-01 → 2025-06-24 (-7d) |  |  |
| 15 | Наполнение сайта | 2025-06-27 → 2025-06-20 (-7d) | 2025-07-01 → 2025-06-24 (-7d) |  |  |
| 16 | Тестирование сайта | 2025-07-02 → 2025-06-25 (-7d) | 2025-07-08 → 2025-07-01 (-7d) |  |  |
| 17 | Сдача сайта заказчику | 2025-07-08 → 2025-07-01 (-7d) | 2025-07-08 → 2025-07-01 (-7d) |  |  |

## Version 9 (saved 2025-03-25, file 9.mpp)

Note of the change: добавить л/р 4, 5; добавить рк1

Last finish 2025-07-01 → 2025-07-04 (+3d).

Changed:

| ID | Task | Start | Finish | Duration | Total float | Other |
| --- | --- | --- | --- | --- | --- | --- |
| 3 | Обучение персонала |  | 2025-05-23 → 2025-05-30 (+7d) | 20d → 25d |  | resources Преподаватели [400%]; Бумага [0.02 пач]; Картриджи для принтера; Петров; Тимофеев; Соломин; Яковлева; Кущнецов → Преподаватели [300%]; Бумага [0.02 пач]; Картриджи для принтера; Петров; Тимофеев; Соломин; Яковлева; Кущнецов; Соколов |
| 4 | **Разработка представительских сайтов** | 2025-05-26 → 2025-06-02 (+7d) | 2025-06-04 → 2025-07-03 (+29d) | 8d → 21.33d | 17d → 1.17d |  |
| 5 | **Разработка сайта 1** | 2025-05-26 → 2025-06-02 (+7d) | 2025-05-30 → 2025-06-06 (+7d) |  | 17d → 1.17d |  |
| 6 | Разработка дизайна сайта 1 | 2025-05-26 → 2025-06-02 (+7d) | 2025-05-27 → 2025-06-03 (+7d) |  | 17d → 1.17d |  |
| 7 | Программирование сайта 1 | 2025-05-28 → 2025-06-04 (+7d) | 2025-05-30 → 2025-06-06 (+7d) |  | 17d → 1.17d |  |
| 8 | **Разработка сайта 2** | 2025-05-29 → 2025-06-05 (+7d) | 2025-06-04 → 2025-07-03 (+29d) | 5d → 18.33d | 17d → 1.17d |  |
| 9 | Разработка дизайна сайта 2 | 2025-05-29 → 2025-06-05 (+7d) | 2025-05-30 → 2025-06-06 (+7d) |  | 17d → 1.17d |  |
| 10 | Программирование сайта 2 | 2025-06-02 → 2025-06-25 (+23d) | 2025-06-04 → 2025-07-03 (+29d) |  | 17d → 1.17d |  |
| 11 | Представительские сайты создани | 2025-06-04 → 2025-07-03 (+29d) | 2025-06-04 → 2025-07-03 (+29d) |  | 17d → 1.17d |  |
| 12 | **Разработка корпоративного сайта** | 2025-05-26 → 2025-06-02 (+7d) | 2025-07-01 → 2025-07-04 (+3d) | 25d → 22.5d |  |  |
| 13 | Проектирование сайта | 2025-05-26 → 2025-06-02 (+7d) | 2025-05-30 → 2025-06-06 (+7d) |  |  |  |
| 14 | Программирование сайта | 2025-06-02 → 2025-06-09 (+7d) |  | 15d → 10d |  | resources Соломин; Яковлева → Соломин; Яковлева; Тимофеев |
| 16 | Тестирование сайта |  | 2025-07-01 → 2025-07-04 (+3d) |  |  | resources Соломин; Яковлева → Соломин; Яковлева; Тимофеев |
| 17 | Сдача сайта заказчику | 2025-07-01 → 2025-07-04 (+3d) | 2025-07-01 → 2025-07-04 (+3d) |  |  |  |

## Version 10 (saved 2025-03-25, file 9_software_base_plan.mpp)

Note of the change: добавить л/р 4, 5; добавить рк1

Last finish stays 2025-07-04.

Changed:

| ID | Task | Finish | Duration | Other |
| --- | --- | --- | --- | --- |
| 1 | Начало проекта |  |  | baseline start none → 2025-04-07; baseline finish none → 2025-04-07 |
| 2 | Установка ПО | 2025-04-28 → 2025-04-17 (-11d) | 15d → 7.5d | baseline start none → 2025-04-08; baseline finish none → 2025-04-17 |
| 3 | Обучение персонала |  |  | baseline start none → 2025-04-22; baseline finish none → 2025-05-30 |
| 4 | **Разработка представительских сайтов** |  |  | baseline start none → 2025-06-02; baseline finish none → 2025-07-03 |
| 5 | **Разработка сайта 1** |  |  | baseline start none → 2025-06-02; baseline finish none → 2025-06-06 |
| 6 | Разработка дизайна сайта 1 |  |  | baseline start none → 2025-06-02; baseline finish none → 2025-06-03 |
| 7 | Программирование сайта 1 |  |  | baseline start none → 2025-06-04; baseline finish none → 2025-06-06 |
| 8 | **Разработка сайта 2** |  |  | baseline start none → 2025-06-05; baseline finish none → 2025-07-03 |
| 9 | Разработка дизайна сайта 2 |  |  | baseline start none → 2025-06-05; baseline finish none → 2025-06-06 |
| 10 | Программирование сайта 2 |  |  | baseline start none → 2025-06-25; baseline finish none → 2025-07-03 |
| 11 | Представительские сайты создани |  |  | baseline start none → 2025-07-03; baseline finish none → 2025-07-03 |
| 12 | **Разработка корпоративного сайта** |  |  | baseline start none → 2025-06-02; baseline finish none → 2025-07-04 |
| 13 | Проектирование сайта |  |  | baseline start none → 2025-06-02; baseline finish none → 2025-06-06 |
| 14 | Программирование сайта |  |  | baseline start none → 2025-06-09; baseline finish none → 2025-06-24 |
| 15 | Наполнение сайта |  |  | baseline start none → 2025-06-20; baseline finish none → 2025-06-24 |
| 16 | Тестирование сайта |  |  | baseline start none → 2025-06-25; baseline finish none → 2025-07-04 |
| 17 | Сдача сайта заказчику |  |  | baseline start none → 2025-07-04; baseline finish none → 2025-07-04 |

## Version 11 (data date 2025-06-12, saved 2025-03-25, file 10.mpp)

Note of the change: добавить л/р 4, 5; добавить рк1

Last finish stays 2025-07-04. Complete tasks 0 → 7.

Changed:

| ID | Task | Start | Finish | Complete | Total float |
| --- | --- | --- | --- | --- | --- |
| 1 | Начало проекта | 2025-04-07 A | 2025-04-07 A | 0% → 100% | 0d → none |
| 2 | Установка ПО | 2025-04-08 A | 2025-04-17 A | 0% → 100% | 0d → none |
| 3 | Обучение персонала | 2025-04-22 A | 2025-05-30 A | 0% → 100% | 0d → none |
| 4 | **Разработка представительских сайтов** | 2025-06-02 A |  | 0% → 70% |  |
| 5 | **Разработка сайта 1** | 2025-06-02 A | 2025-06-06 A | 0% → 100% | 1.17d → none |
| 6 | Разработка дизайна сайта 1 | 2025-06-02 A | 2025-06-03 A | 0% → 100% | 1.17d → none |
| 7 | Программирование сайта 1 | 2025-06-04 A | 2025-06-06 A | 0% → 100% | 1.17d → none |
| 8 | **Разработка сайта 2** | 2025-06-05 A |  | 0% → 40% |  |
| 9 | Разработка дизайна сайта 2 | 2025-06-05 A | 2025-06-06 A | 0% → 100% | 1.17d → none |
| 12 | **Разработка корпоративного сайта** | 2025-06-02 A |  | 0% → 24% |  |
| 13 | Проектирование сайта | 2025-06-02 A | 2025-06-06 A | 0% → 100% | 0d → none |
| 14 | Программирование сайта | 2025-06-09 A |  | 0% → 5% |  |
